# Carta Gantt Las Quilicura

Schedule from MS Project, 2015-04-13 to 2015-06-06, 6 hours a day, A marks actual dates.

## Calendars

- Standard: Mon-Fri 08:00-12:00, 13:00-17:00; Sat-Sun off.

## Schedule

| ID | WBS | Task | Type | Duration | Start | Finish | Predecessors | Complete | Remaining | Total slack |
| --- | --- | --- | --- | --- | --- | --- | --- | --- | --- | --- |
| 1 | 1 | Notificacion de Adjudicacion | manual | 1.33d | 2015-04-13 A | 2015-04-13 A |  | 100% |  |  |
| 2 | 2 | Recepcion OC del cliente | manual | 1.33d | 2015-04-13 A | 2015-04-13 A |  | 100% |  |  |
| 3 | 3 | Gestión de compra de materiales | manual | 1.33d | 2015-04-13 A | 2015-04-13 A |  | 100% |  |  |
| 4 | 4 | Gestión de compra Equipos | manual | 1.33d | 2015-04-13 A | 2015-04-13 A |  | 100% |  |  |
| 5 | 5 | Levantamiento on site | manual | 1.33d | 2015-04-13 A | 2015-04-13 A |  | 100% |  |  |
| 6 | 6 | Recepción de Anticipo | manual | 1.33d | 2015-04-13 A | 2015-04-13 A |  | 100% |  |  |
| 7 | 7 | **Instalación de Canalización y cableado de acercamiento a perimetral** |  | 14d | 2015-04-27 A | 2015-05-11 |  | 4% | 13.42d |  |
| 8 | 7.1 | Instalacion de Tabique separador corrientes debiles | manual | 4d | 2015-04-27 A | 2015-04-29 |  | 33% | 2.67d |  |
| 9 | 7.2 | Instalacion de canalización inexistente | manual | 14d | 2015-04-27 | 2015-05-11 |  |  |  |  |
| 10 | 7.3 | Instalación de cableado de acercamiento | manual | 14d | 2015-04-27 | 2015-05-11 |  |  |  |  |
| 11 | 8 | **Intervención de la red Física Cableado** |  | 3d | 2015-05-15 | 2015-05-17 | 7 |  |  |  |
| 12 | 8.1 | Retiro de cableado existente | manual | 1d | 2015-05-15 | 2015-05-15 |  |  |  |  |
| 13 | 8.2 | Recableado de Puntos de RED | manual | 1d | 2015-05-15 | 2015-05-15 |  |  |  |  |
| 14 | 8.3 | Reordenamiento de Rack y punchado de patch pannel | manual | 1d | 2015-05-16 | 2015-05-16 | 13 |  |  |  |
| 15 | 8.4 | Punchado de Puntos de red usuarios | manual | 2d | 2015-05-16 | 2015-05-17 |  |  |  |  |
| 16 | 8.5 | Certificación de puntos de red | manual | 1d | 2015-05-16 | 2015-05-16 |  |  |  |  |
| 17 | 8.6 | Pruebas de conjunta con tagler de continuidad de servicios (Chaeklist) | manual | 1d | 2015-05-17 | 2015-05-17 |  |  |  |  |
| 18 | 9 | Soporte Post Cambio prescencial | manual | 1d | 2015-05-18 | 2015-05-18 |  |  |  |  |
| 19 | 10 | Soporte En caso de problemas con puntos de red | manual | 5d | 2015-05-18 | 2015-05-21 |  |  |  |  |
| 20 | 11 | Recepcion de Equipamientoa pedido | manual | 1d | 2015-05-15 | 2015-05-15 |  |  |  |  |
| 21 | 12 | Pruebas de laboratorio y configuracion | manual | 5d | 2015-05-15 | 2015-05-21 | 20 |  |  |  |
| 22 | 13 | **Intervención de la red Equipos** |  | 6.33d | 2015-05-22 | 2015-05-28 |  |  |  | 0d |
| 23 | 13.1 | Cambio de Switches CORE, BORDER y APs | manual | 3d | 2015-05-22 | 2015-05-24 |  |  |  |  |
| 24 | 13.2 | Instalación de Fortinet e integración AD | manual | 2d | 2015-05-22 | 2015-05-25 |  |  |  |  |
| 25 | 13.3 | Marcha Blanca | manual | 5d | 2015-05-25 | 2015-05-28 |  |  |  |  |
| 26 | 14 | Preparacion y entrega de informe final | manual | 5d | 2015-05-28 | 2015-06-03 | 25 |  |  |  |
| 27 | 15 | Capacitación en administración de equipos Firewall y switches | manual | 2.67d | 2015-05-28 | 2015-06-01 | 25 |  |  |  |
| 28 | 16 | Recepción Conforme proyecto | manual | 1d | 2015-06-03 | 2015-06-03 | 26 |  |  |  |
| 29 | 17 | Implementación de MPLS | manual | 1d | 2015-06-06 | 2015-06-06 |  |  |  |  |
