# Proyecto Portal de Reportes

Schedule from MS Project, 2015-03-09 to 2015-04-28, 9 hours a day.
Barrick Gold Corporation

## Calendars

- Standard: Mon-Fri 08:00-12:00, 13:00-17:00; Sat-Sun off.

## Schedule

| ID | WBS | Task | Duration | Start | Finish | Predecessors | Total slack |
| --- | --- | --- | --- | --- | --- | --- | --- |
| 1 | 1 | Reunion de Kickoff | 2h | 2015-03-09 08:00 | 2015-03-09 10:00 |  | 0d |
| 2 | 2 | **Levantamiento** | 1.44d | 2015-03-09 10:00 | 2015-03-10 16:00 |  | 0d |
| 3 | 2.1 | Levantamiento PM-Cliente | 0.22d | 2015-03-09 10:00 | 2015-03-09 12:00 | 1 | 0d |
| 4 | 2.2 | **Entrega de Documentacion Cliente - PM** | 0.78d | 2015-03-09 13:00 | 2015-03-10 11:00 |  | 0d |
| 5 | 2.2.1 | Definicion de Reportes a Incluir | 1h | 2015-03-09 13:00 | 2015-03-09 14:00 | 3 | 0d |
| 6 | 2.2.2 | Definicion de Queires para Dashboard | 1h | 2015-03-09 14:00 | 2015-03-09 15:00 | 5 | 0d |
| 7 | 2.2.3 | Entrega de archivos Imagen Corporativa | 1h | 2015-03-09 15:00 | 2015-03-09 16:00 | 6 | 0d |
| 8 | 2.2.4 | Entrega de copia de Base de Datos de Produccion | 2h | 2015-03-09 16:00 | 2015-03-10 09:00 | 7 | 0d |
| 9 | 2.2.5 | Revisión de Requerimiento Equipo de Desarrollo-Cliente-PM | 2h | 2015-03-10 09:00 | 2015-03-10 11:00 | 8 | 0d |
| 10 | 2.3 | Levantamiento Equipo de Desarrollo-PM | 4h | 2015-03-10 11:00 | 2015-03-10 16:00 | 9 | 0d |
| 11 | 3 | Ánalisis Técnico | 27h | 2015-03-10 16:00 | 2015-03-16 10:00 | 10 | 0d |
| 12 | 4 | **Instalación y Configuracion ambiente de pruebas** | 1d | 2015-03-16 10:00 | 2015-03-17 11:00 |  | 0d |
| 13 | 4.1 | Microsoft Windows 2008 R2 | 4.5h | 2015-03-16 10:00 | 2015-03-16 15:30 | 11 | 0d |
| 14 | 4.2 | Internet Information Service 7.0 | 4.5h | 2015-03-16 15:30 | 2015-03-17 11:00 | 13 | 0d |
| 15 | 5 | **Prototipo Funcional (Firma Cliente)** | 5d | 2015-03-17 11:00 | 2015-03-24 17:00 | 11 | 0d |
| 16 | 5.1 | Diseño de Prototipo | 43h | 2015-03-17 11:00 | 2015-03-24 15:00 | 14 | 0d |
| 17 | 5.2 | Revisión Prototipo | 2h | 2015-03-24 15:00 | 2015-03-24 17:00 | 16 | 0d |
| 18 | 6 | **Diseño Web (Firma Cliente)** | 5d | 2015-03-25 08:00 | 2015-04-01 14:00 |  | 0d |
| 19 | 6.1 | Desarrollo Diseño | 43h | 2015-03-25 08:00 | 2015-04-01 11:00 | 17 | 0d |
| 20 | 6.2 | Revisión Diseño | 2h | 2015-04-01 11:00 | 2015-04-01 14:00 | 19 | 0d |
| 21 | 7 | **Desarrollo Portal Web de Reportes** | 5d | 2015-04-01 14:00 | 2015-04-09 10:00 |  | 0d |
| 22 | 7.1 | Desarrollo .Net | 45h | 2015-04-01 14:00 | 2015-04-09 10:00 | 20 | 0d |
| 23 | 8 | **Pruebas de integración Queries** | 1.39d | 2015-04-09 10:00 | 2015-04-10 15:30 |  | 0d |
| 24 | 8.1 | **Preparacion de Queries para los Reportes** | 0.89d | 2015-04-09 10:00 | 2015-04-10 10:00 |  | 0d |
| 25 | 8.1.1 | Permisos y Accesos | 2h | 2015-04-09 10:00 | 2015-04-09 12:00 | 22 | 0d |
| 26 | 8.1.2 | Paneles de Dashboard | 2h | 2015-04-09 13:00 | 2015-04-09 15:00 | 25 | 0d |
| 27 | 8.1.3 | Queries de Grilla | 2h | 2015-04-09 15:00 | 2015-04-09 17:00 | 26 | 0d |
| 28 | 8.1.4 | Calculo de Fechas | 2h | 2015-04-10 08:00 | 2015-04-10 10:00 | 27 | 0d |
| 29 | 8.2 | Pruebas de Conección desde Portal Web a Base de Datos | 4.5h | 2015-04-10 10:00 | 2015-04-10 15:30 | 28 | 0d |
| 30 | 9 | Pruebas sistema completo | 9h | 2015-04-10 15:30 | 2015-04-13 16:30 | 29 | 0d |
| 31 | 10 | Aprobacion Cliente - Pruebas en Produccion | 1h | 2015-04-13 16:30 | 2015-04-14 08:30 | 30 | 0d |

| ID | WBS | Task | Duration | Start | Finish | Predecessors | Total slack | Free slack |
| --- | --- | --- | --- | --- | --- | --- | --- | --- |
| 32 | 11 | **Revision configuración servidor de Producción** | 1.5d | 2015-04-14 08:30 | 2015-04-15 15:00 |  | 0d |  |
| 33 | 11.1 | Microsoft Windows 2008 R2 / IIS 7.x | 4.5h | 2015-04-14 08:30 | 2015-04-14 14:00 | 31 | 0d |  |
| 34 | 11.2 | Implementacion Servidor Web | 4.5h | 2015-04-14 14:00 | 2015-04-15 09:30 | 33 | 7.78d | 0d |
| 35 | 11.3 | Implementacion Portal Web | 4.5h | 2015-04-15 09:30 | 2015-04-15 15:00 | 34 | 7.78d |  |
| 36 | 12 | **Pruebas en Servidor de Producción** | 1.5d | 2015-04-14 14:00 | 2015-04-16 10:30 |  | 0d |  |
| 37 | 12.1 | Pruebas en ambiente de Producción | 9h | 2015-04-14 14:00 | 2015-04-15 15:00 | 33 | 0d |  |
| 38 | 12.2 | Supervisión de pruebas en Producción | 4.5h | 2015-04-15 15:00 | 2015-04-16 10:30 | 37 | 0d |  |
| 39 | 13 | **Paso a Producción** | 4.5d | 2015-04-16 10:30 | 2015-04-23 11:00 |  | 0d |  |
| 40 | 13.1 | Supervisión de Paso a Producción | 4.5h | 2015-04-16 10:30 | 2015-04-16 16:00 | 38 | 0d |  |
| 41 | 13.2 | Prueba en Producción | 4.5h | 2015-04-16 16:00 | 2015-04-17 11:30 | 40 | 0d |  |
| 42 | 13.3 | Aprobación Sistema en Producción | 4.5h | 2015-04-17 11:30 | 2015-04-17 17:00 | 41 | 0d |  |
| 43 | 13.4 | Manuales y Documentación Sistema | 27h | 2015-04-20 08:00 | 2015-04-23 11:00 | 42 | 0d |  |
| 44 | 14 | **Capacitación / Entrenamiento** | 1d | 2015-04-23 11:00 | 2015-04-24 12:00 |  | 0d |  |
| 45 | 14.1 | Capacitación a Equipo Funcional | 4.5h | 2015-04-23 11:00 | 2015-04-23 16:30 | 43 | 0d |  |
| 46 | 14.2 | Capacitación a Equipo Técnico | 4.5h | 2015-04-23 16:30 | 2015-04-24 12:00 | 45 | 0d |  |
| 47 | 15 | 8 Reuniones con el Cliente (reporte de avances) | 16h | 2015-04-24 13:00 | 2015-04-28 12:00 | 46 | 0d |  |
