# Diseño Plataforma WEB - Plan de Trabajo V1

Schedule from MS Project, 2020-09-02 to 2020-11-12, status date 2020-08-07, A marks actual dates.

## Calendars

- Estándar: Mon-Fri 09:00-13:00, 15:00-19:00; Sat-Sun off. Exceptions (off unless hours are given): 2020-09-18 to 2020-09-19.

## Resources

| Resource |
| --- |
| Omar Chavez |
| Gabriel Santibañez |
| Esteban Valera |
| Sebastian Bustos |
| Fredy Quezada |
| Oscar Garin |
| TECK |

## Schedule

| ID | WBS | Task | Type | Duration | Start | Finish | Predecessors | Complete | Remaining | Total slack | Resources | Work | Actual work | HH |
| --- | --- | --- | --- | --- | --- | --- | --- | --- | --- | --- | --- | --- | --- | --- |
| 1 | 1 | **Implementación nuevas funcionalidades OR Document Control** |  | 50.5d | 2020-09-02 09:00 A | 2020-11-12 13:00 |  | 39% | 30.56d | 0d |  | 526h | 305.2h | 454,5 |
| 2 | 1.1 | **Coordinación con Cliente** |  | 0d | 2020-09-02 09:00 A | 2020-09-02 09:00 A |  | 100% |  |  |  |  |  |  |
| 3 | 1.1.1 | Notificación Comercial | milestone | 0d | 2020-09-02 09:00 A | 2020-09-02 09:00 A |  | 100% |  |  | Omar Chavez; Oscar Garin |  |  |  |
| 4 | 1.1.2 | Coordinación pre KoM | milestone | 0d | 2020-09-02 09:00 A | 2020-09-02 09:00 A |  | 100% |  |  | Omar Chavez; Oscar Garin |  |  |  |
| 5 | 1.1.3 | Reunión TECK (KoM) | milestone | 0d | 2020-09-02 09:00 A | 2020-09-02 09:00 A |  | 100% |  |  | Omar Chavez; Oscar Garin |  |  |  |
| 6 | 1.4 | **Ingeniería de diseño** |  | 18d | 2020-09-02 09:00 A | 2020-09-28 19:00 A | 5 | 100% |  |  |  | 272h | 272h | 162 |
| 7 | 1.4.1 | **Levantamiento** |  | 18d | 2020-09-02 09:00 A | 2020-09-28 19:00 A | 5 | 100% |  |  |  | 272h | 272h | 162 |
| 8 | 1.2.1.1 | Hito 0: Inicio oficial del proyecto | milestone | 0d | 2020-09-02 09:00 A | 2020-09-02 09:00 A | 5 | 100% |  |  | Omar Chavez; Oscar Garin |  |  |  |
| 9 | 1.2.1.2 | Entrega documentación sitio OR Document Control |  | 3.5d | 2020-09-02 09:00 A | 2020-09-07 13:00 A | 5 | 100% |  |  | TECK | 28h | 28h | 31,5 |
| 10 | 1.2.1.3 | Análisis situación actual |  | 0.5d | 2020-09-07 15:00 A | 2020-09-07 19:00 A | 9 | 100% |  |  | Fredy Quezada; Gabriel Santibañez; Omar Chavez | 12h | 12h | 4,5 |
| 11 | 1.4.1.1 | Análisis sitio OR Document Control |  | 0.5d | 2020-09-08 09:00 A | 2020-09-08 13:00 A | 10 | 100% |  |  | Fredy Quezada; Gabriel Santibañez; Omar Chavez | 12h | 12h | 4,5 |
| 12 | 1.2.1.5 | Levantamiento Funcional |  | 0.5d | 2020-09-08 09:00 A | 2020-09-08 13:00 A | 10 | 100% |  |  | Fredy Quezada; Gabriel Santibañez; Omar Chavez | 12h | 12h | 4,5 |
| 13 | 1.2.1.6 | Entrega de Workflows para análisis por parte de TECK |  | 0.5d | 2020-09-08 09:00 A | 2020-09-08 13:00 A | 10 | 100% |  |  | Fredy Quezada; Gabriel Santibañez; Omar Chavez | 12h | 12h | 4,5 |
| 14 | 1.2.1.7 | Análisis Workflows entregados por TECK |  | 3d | 2020-09-08 15:00 A | 2020-09-11 13:00 A | 13 | 100% |  |  | Fredy Quezada; Gabriel Santibañez; Omar Chavez | 72h | 72h | 27 |
| 15 | 1.4.1.1 | **Levantamiento integración con portal AIM** |  | 1d | 2020-09-08 15:00 A | 2020-09-09 13:00 A |  | 100% |  |  |  | 24h | 24h |  |
| 16 | 1.2.1.8.1 | Búsqueda básica |  | 0.5d | 2020-09-08 15:00 A | 2020-09-08 19:00 A | 12 | 100% |  |  | Fredy Quezada; Gabriel Santibañez; Omar Chavez | 12h | 12h | 4,5 |
| 17 | 1.2.1.8.2 | Búsqueda avanzada (Definición de nueva categoría) |  | 0.5d | 2020-09-09 09:00 A | 2020-09-09 13:00 A | 16 | 100% |  |  | Fredy Quezada; Gabriel Santibañez; Omar Chavez | 12h | 12h | 4,5 |
| 18 | 1.4.1.1 | Levantamiento de reporte |  | 1.5d | 2020-09-11 15:00 A | 2020-09-14 19:00 A | 14 | 100% |  |  | Fredy Quezada; Gabriel Santibañez; Omar Chavez | 36h | 36h | 13,5 |
| 19 | 1.4.1.1 | Generación de mockup e Informe levantamiento |  | 4d | 2020-09-15 09:00 A | 2020-09-21 19:00 A | 18 | 100% |  |  | Gabriel Santibañez; Esteban Valera | 64h | 64h | 36 |
| 20 | 1.2.1.11 | **Generación de propuesta y priorización de Sprints** |  | 5d | 2020-09-21 19:00 A | 2020-09-28 19:00 A |  | 100% |  |  |  |  |  | 45 |
| 21 | 1.2.1.11.1 | Hito 1: Entrega informe levantamiento | milestone | 0d | 2020-09-21 19:00 A | 2020-09-21 19:00 A | 19 | 100% |  |  | Omar Chavez |  |  |  |
| 22 | 1.2.1.11.2 | Revisión por parte TECK | milestone | 0d | 2020-09-21 19:00 A | 2020-09-21 19:00 A | 21 | 100% |  |  | TECK |  |  |  |
| 23 | 1.2.1.11.3 | Hito 2: Aprobación levantamiento e Inicio de Desarrollo | milestone | 0d | 2020-09-28 19:00 A | 2020-09-28 19:00 A | 22FS+5d | 100% |  |  | TECK |  |  |  |
| 24 | 1.4 | **Ingeniería de Construcción (Desarrollo)** |  | 29d | 2020-09-29 09:00 A | 2020-11-06 19:00 | 23 | 14% | 24.99d | 0d |  | 250h | 33.2h | 261 |
| 25 | 1.4.1 | **Preparación de ambiente** |  | 1d | 2020-09-29 09:00 A | 2020-09-29 19:00 A | 23 | 100% |  |  |  | 8h | 8h |  |
| 26 | 1.4.1.1 | Configuración de accesos personal VMICA para sitio OR Document Control |  | 1d | 2020-09-29 09:00 A | 2020-09-29 19:00 A | 23 | 100% |  |  | TECK | 8h | 8h |  |
| 27 | 1.3.1.2 | Disponibilización ambiente de Desarrollo | milestone | 0d | 2020-09-29 19:00 A | 2020-09-29 19:00 A | 26 | 100% |  |  | TECK |  |  |  |

| ID | WBS | Task | Type | Duration | Start | Finish | Predecessors | Complete | Remaining | Total slack | Resources | Work | Actual work | HH |
| --- | --- | --- | --- | --- | --- | --- | --- | --- | --- | --- | --- | --- | --- | --- |
| 28 | 1.4.6 | **Búsqueda Simple de documentos OR en portal AIM** |  | 2.5d | 2020-09-30 09:00 A | 2020-10-02 13:00 A |  | 100% |  |  |  | 24h | 24h | 22,5 |
| 29 | 1.4.6.1 | Creación de nuevas listas necesarias |  | 0.5d | 2020-09-30 09:00 A | 2020-09-30 13:00 A | 25 | 100% |  |  | Gabriel Santibañez | 4h | 4h | 4,5 |
| 30 | 1.3.2.2 | Indexación de nueva matadata |  | 0.5d | 2020-09-30 15:00 A | 2020-09-30 19:00 A | 29 | 100% |  |  | Gabriel Santibañez | 4h | 4h | 4,5 |
| 31 | 1.3.2.3 | Configuración de búsqueda en nuevo sitio |  | 0.5d | 2020-10-01 09:00 A | 2020-10-01 13:00 A | 30 | 100% |  |  | Gabriel Santibañez | 4h | 4h | 4,5 |
| 32 | 1.3.2.4 | Configuración resultado de búsquedas (Incorporación sitio OR Document Control) |  | 0.5d | 2020-10-01 15:00 A | 2020-10-01 19:00 A | 31 | 100% |  |  | Gabriel Santibañez | 4h | 4h | 4,5 |
| 33 | 1.3.2.5 | Pruebas QA y ajustes |  | 0.5d | 2020-10-02 09:00 A | 2020-10-02 13:00 A | 32 | 100% |  |  | Gabriel Santibañez [50%]; Sebastian Bustos | 4h | 4h | 4,5 |
| 34 | 1.3.2.6 | Paso a producción |  | 0.5d | 2020-10-02 09:00 A | 2020-10-02 13:00 A | 32 | 100% |  |  | Gabriel Santibañez | 4h | 4h | 4,5 |
| 35 | 1.3.3 | **Búsqueda Avanzada de documentos OR Document Control en portal AIM** |  | 4d | 2020-10-02 15:00 A | 2020-10-08 13:00 |  | 3% | 3.87d | 0d |  | 38h | 1.2h | 36 |
| 36 | 1.3.3.1 | Configuración de metadata |  | 0.5d | 2020-10-02 15:00 A | 2020-10-02 19:00 | 28 | 30% | 0.35d | 0d | Gabriel Santibañez | 4h | 1.2h | 4,5 |
| 37 | 1.3.3.2 | Generación formulario para búsqueda avanzada en base a nueva categoría |  | 0.5d | 2020-10-05 09:00 | 2020-10-05 13:00 | 36 |  |  | 0d | Gabriel Santibañez | 4h |  | 4,5 |
| 38 | 1.3.3.3 | Generación lógica para búsquedas incluyentes y excluyentes |  | 0.5d | 2020-10-05 15:00 | 2020-10-05 19:00 | 37 |  |  | 0d | Gabriel Santibañez | 4h |  | 4,5 |
| 39 | 1.3.3.4 | Genaración de nuevas listas SharePoint para listas desplegables |  | 0.5d | 2020-10-06 09:00 | 2020-10-06 13:00 | 38 |  |  | 0d | Gabriel Santibañez | 4h |  | 4,5 |
| 40 | 1.3.3.5 | Configuración de perfilamiento en portal AIM |  | 0.5d | 2020-10-06 15:00 | 2020-10-06 19:00 | 39 |  |  | 0d | Gabriel Santibañez | 4h |  | 4,5 |
| 41 | 1.3.3.6 | Configuración resultado de búsquedas (Incorporación sitio OR Document Control) |  | 1d | 2020-10-07 09:00 | 2020-10-07 19:00 | 40 |  |  | 0d | Gabriel Santibañez | 8h |  |  |
| 42 | 1.3.3.7 | Pruebas QA y ajustes |  | 0.5d | 2020-10-08 09:00 | 2020-10-08 13:00 | 41 |  |  | 0d | Sebastian Bustos [50%]; Gabriel Santibañez | 6h |  | 4,5 |
| 43 | 1.3.3.8 | Paso a producción |  | 0.5d | 2020-10-08 09:00 | 2020-10-08 13:00 | 41 |  |  | 0d | Gabriel Santibañez | 4h |  | 4,5 |
| 44 | 1.3.3.9 | Hito 3: Liberación primer Sprint (Búsqueda simple y avanzada de documentos OR en portal AIM) | milestone | 0d | 2020-10-08 13:00 | 2020-10-08 13:00 | 43 |  |  | 0d | Omar Chavez |  |  |  |
| 45 | 1.3.4 | **Desarrollo funcionalidades para Aprobación de Documentos** |  | 7.5d | 2020-10-08 15:00 | 2020-10-19 19:00 | 35 |  |  | 0d |  | 60h |  | 67,5 |
| 46 | 1.3.4.1 | Implementación lógica para rechazo del documento |  | 1d | 2020-10-08 15:00 | 2020-10-09 13:00 | 35 |  |  | 0d | Gabriel Santibañez | 8h |  |  |
| 47 | 1.3.4.2 | Desarrollo funcionalidad ingreso de comentarios (Nativo de SharePoint) |  | 1d | 2020-10-09 15:00 | 2020-10-12 13:00 | 46 |  |  | 0d | Gabriel Santibañez | 8h |  |  |
| 48 | 1.3.4.3 | **Generación pantalla para listar qué usuarios realizaron una revisión con sus respectivo comentario** |  | 1.5d | 2020-10-12 15:00 | 2020-10-13 19:00 | 47 |  |  | 0d |  | 12h |  | 13,5 |
| 49 | 1.3.4.3.1 | Modificación/creación de listas para incorporar comentarios y estado de revisión |  | 1d | 2020-10-12 15:00 | 2020-10-13 13:00 | 47 |  |  | 0d | Gabriel Santibañez | 8h |  |  |
| 50 | 1.3.4.3.2 | Generación lógica perfilamiento (aprobador) |  | 0.5d | 2020-10-13 15:00 | 2020-10-13 19:00 | 49 |  |  | 0d | Gabriel Santibañez | 4h |  | 4,5 |
| 51 | 1.3.4.4 | **Implementación de Workflows** |  | 4d | 2020-10-14 09:00 | 2020-10-19 19:00 |  |  |  | 0d |  | 32h |  | 36 |
| 52 | 1.3.4.4.1 | Revisión |  | 1d | 2020-10-14 09:00 | 2020-10-14 19:00 | 50 |  |  | 0d | Gabriel Santibañez | 8h |  |  |
| 53 | 1.3.4.4.2 | Notificación |  | 1.5d | 2020-10-15 09:00 | 2020-10-16 13:00 | 52 |  |  | 0d | Gabriel Santibañez | 12h |  | 13,5 |
| 54 | 1.3.4.4.3 | Cambio de estado |  | 1.5d | 2020-10-16 15:00 | 2020-10-19 19:00 | 53 |  |  | 0d | Gabriel Santibañez | 12h |  | 13,5 |

| ID | WBS | Task | Type | Duration | Start | Finish | Predecessors | Total slack | Resources | Work | HH |
| --- | --- | --- | --- | --- | --- | --- | --- | --- | --- | --- | --- |
| 55 | 1.3.5 | **Desarrollo funcionalidades para Emisión de Documentos** |  | 5d | 2020-10-20 09:00 | 2020-10-26 19:00 | 54 | 0d |  | 44h | 45 |
| 56 | 1.3.5.1 | **Configuración Powerautomate de notificación (Correo electrónico) para la totalidad de usuarios del sitio OR Document Control** |  | 3d | 2020-10-20 09:00 | 2020-10-22 19:00 | 54 | 0d |  | 24h | 27 |
| 57 | 1.3.5.1.1 | Modificación de Workflows de notificación |  | 1d | 2020-10-20 09:00 | 2020-10-20 19:00 | 54 | 0d | Gabriel Santibañez | 8h |  |
| 58 | 1.3.5.1.2 | Configuración de listas |  | 1d | 2020-10-21 09:00 | 2020-10-21 19:00 | 57 | 0d | Gabriel Santibañez | 8h |  |
| 59 | 1.3.5.1.3 | **Implementación lógica para descarga de documentos en formato PDF** |  | 1d | 2020-10-22 09:00 | 2020-10-22 19:00 |  | 0d |  | 8h |  |
| 60 | 1.3.5.1.3.1 | Desarrollo funcionalidad para conversión de documentos |  | 1d | 2020-10-22 09:00 | 2020-10-22 19:00 | 58 | 0d | Gabriel Santibañez | 8h |  |
| 61 | 1.3.5.2 | Incorporación funcionalidad en sitio OR Document Control |  | 1d | 2020-10-23 09:00 | 2020-10-23 19:00 | 60 | 0d | Gabriel Santibañez | 8h |  |
| 62 | 1.3.5.3 | Pruebas QA y Ajustes |  | 0.5d | 2020-10-26 09:00 | 2020-10-26 13:00 | 61 | 0d | Gabriel Santibañez; Sebastian Bustos | 8h | 4,5 |
| 63 | 1.3.5.4 | Paso a Producción |  | 0.5d | 2020-10-26 15:00 | 2020-10-26 19:00 | 62 | 0d | Gabriel Santibañez | 4h | 4,5 |
| 64 | 1.3.5.5 | Hito 4: Segundo Sprint (Aprobación, Emisión de documentos y Conversión de documentos Word a PDF) | milestone | 0d | 2020-10-26 19:00 | 2020-10-26 19:00 | 63 | 0d | Omar Chavez |  |  |
| 65 | 1.3.6 | **Desarrollo funcionalidades para Modificación de Documentos** |  | 4d | 2020-10-27 09:00 | 2020-10-30 19:00 | 63 | 0d |  | 32h | 36 |
| 66 | 1.3.6.1 | Generación lógica para controlar la modificación de documentos en base a referencias cruzadas |  | 2d | 2020-10-27 09:00 | 2020-10-28 19:00 | 64 | 0d | Gabriel Santibañez | 16h | 18 |
| 67 | 1.3.6.2 | **Generación lógica para cambios de versión automática** |  | 2d | 2020-10-29 09:00 | 2020-10-30 19:00 |  | 0d |  | 16h | 18 |
| 68 | 1.3.6.2.1 | Desarrollo Workflows para cambios de versión |  | 2d | 2020-10-29 09:00 | 2020-10-30 19:00 | 66 | 0d | Gabriel Santibañez | 16h | 18 |
| 69 | 1.3.7 | **Desarrollo funcionalidades para Administración y Trazabilidad de Documentos** |  | 5d | 2020-11-02 09:00 | 2020-11-06 19:00 | 68 | 0d |  | 44h | 45 |
| 70 | 1.3.7.1 | Indexación de metadata para búsquedas en sitio OR Document Control |  | 0.5d | 2020-11-02 09:00 | 2020-11-02 13:00 | 68 | 0d | Gabriel Santibañez | 4h | 4,5 |
| 71 | 1.3.7.2 | Generación de lógica para descarga de documentos con su metadata respectiva |  | 0.5d | 2020-11-02 15:00 | 2020-11-02 19:00 | 70 | 0d | Gabriel Santibañez | 4h | 4,5 |
| 72 | 1.3.7.3 | Generación de reporte de documentos |  | 1d | 2020-11-03 09:00 | 2020-11-03 19:00 | 71 | 0d | Gabriel Santibañez | 8h |  |
| 73 | 1.3.7.4 | Incorporación de nueva metadata en los documentos (Texto), para referenciar documentos relacionados |  | 1d | 2020-11-04 09:00 | 2020-11-04 19:00 | 72 | 0d | Gabriel Santibañez | 8h |  |
| 74 | 1.3.7.5 | Pruebas QA y ajustes |  | 0.5d | 2020-11-05 09:00 | 2020-11-05 13:00 | 73 | 0d | Gabriel Santibañez; Sebastian Bustos | 8h | 4,5 |
| 75 | 1.3.7.6 | Paso a producción |  | 0.5d | 2020-11-05 15:00 | 2020-11-05 19:00 | 74 | 0d | Gabriel Santibañez | 4h | 4,5 |
| 76 | 1.3.7.7 | Generación manual de usuario |  | 1d | 2020-11-06 09:00 | 2020-11-06 19:00 | 75 | 0d | Esteban Valera | 8h |  |
| 77 | 1.2.12 | **QA en ambiente producción para solución completa implementada** |  | 3d | 2020-11-09 09:00 | 2020-11-11 19:00 |  | 0d |  |  | 27 |
| 78 | 1.4.1 | **Control de calidad** |  | 3d | 2020-11-09 09:00 | 2020-11-11 19:00 | 76 | 0d |  |  | 27 |
| 79 | 1.4.1.1 | Pruebas unitarias |  | 1d | 2020-11-09 09:00 | 2020-11-09 19:00 | 76 | 0d |  |  |  |
| 80 | 1.4.1.2 | Hito 5: Entrega UAT | milestone | 0d | 2020-11-09 19:00 | 2020-11-09 19:00 | 79 | 0d |  |  |  |
| 81 | 1.4.1.3 | Hito 6: Pruebas de usuario TECK en base a UAT |  | 1d | 2020-11-10 09:00 | 2020-11-10 19:00 | 80 | 0d |  |  |  |
| 82 | 1.4.1.4 | Ajustes y correcciones |  | 1d | 2020-11-11 09:00 | 2020-11-11 19:00 | 81 | 0d |  |  |  |
| 83 | 1.4.2 | Hito 5: Tercer Sprint (Reporte y Notificaciones) | milestone | 0d | 2020-11-11 19:00 | 2020-11-11 19:00 | 82 | 0.5d | Omar Chavez |  |  |

| ID | WBS | Task | Type | Duration | Start | Finish | Predecessors | Total slack | Resources | Work | HH |
| --- | --- | --- | --- | --- | --- | --- | --- | --- | --- | --- | --- |
| 84 | 1.5 | **Implementación Final de Solución** |  | 0.5d | 2020-11-12 09:00 | 2020-11-12 13:00 | 82 | 0d |  | 4h | 4,5 |
| 85 | 1.5.1 | **Marcha Blanca** |  | 0.5d | 2020-11-12 09:00 | 2020-11-12 13:00 |  | 0d |  | 4h | 4,5 |
| 86 | 1.5.1.1 | Capacitaciones |  | 0.5d | 2020-11-12 09:00 | 2020-11-12 13:00 | 82 | 0d | Fredy Quezada | 4h | 4,5 |
| 87 | 1.6 | Hito 7: Fin marcha blanca | milestone | 0d | 2020-11-12 13:00 | 2020-11-12 13:00 | 85 | 0d | Omar Chavez |  |  |
| 88 | 1.7 | Hito 8: Fin del Proyecto | milestone | 0d | 2020-11-12 13:00 | 2020-11-12 13:00 | 87 | 0d | Omar Chavez |  |  |
