# Carta Gantt Proyecto Virtual Tagler

Schedule from MS Project, 2015-04-08 to 2015-04-23.
Microsoft

## Calendars

- Estándar: Mon-Fri 09:00-13:00, 15:00-19:00; Sat-Sun off.

## Schedule

| ID | WBS | Task | Type | Duration | Start | Finish |
| --- | --- | --- | --- | --- | --- | --- |
| 1 | 1 | **Proyecto de Virtualización - TAGLER** |  | 11.88d | 2015-04-08 08:00 | 2015-04-23 17:00 |
| 2 | 1.1 | **Instalación** |  | 1.88d | 2015-04-08 08:00 | 2015-04-09 17:00 |
| 3 | 1.1.1 | Instalación física Storage y Servidores | manual | 1d | 2015-04-08 08:00 | 2015-04-08 18:00 |
| 4 | 1.1.2 | Startup de equipamiento | manual | 2h | 2015-04-08 08:00 | 2015-04-08 10:00 |
| 5 | 1.1.3 | Actualización de firmware Storage y Servidores | manual | 3h | 2015-04-08 08:00 | 2015-04-08 11:00 |
| 6 | 1.1.4 | Inicialización de Storage y creación LUN´S | manual | 5h | 2015-04-08 08:00 | 2015-04-08 13:00 |
| 7 | 1.1.5 | Interconexión de Servidores | manual | 2h | 2015-04-08 08:00 | 2015-04-08 10:00 |
| 8 | 1.1.6 | **Instalación Ambiente Vmware** |  | 2.88d | 2015-04-10 08:00 | 2015-04-14 17:00 |
| 9 | 1.1.6.1 | Instalación S.O. Vmware 5.5 en 2 servidores | manual | 1d | 2015-04-10 08:00 | 2015-04-10 18:00 |
| 10 | 1.1.6.2 | Instalación de Servidor Virtual Center | manual | 1d | 2015-04-10 08:00 | 2015-04-10 18:00 |
| 11 | 1.1.6.3 | Creación de Cluster Vmware | manual | 2h | 2015-04-10 08:00 | 2015-04-10 10:00 |
| 12 | 1.1.6.4 | Formateo de LUN y Creación de DataStore | manual | 1h | 2015-04-10 08:00 | 2015-04-10 09:00 |
| 13 | 1.1.6.5 | Habilitación HA y DRS | manual | 1h | 2015-04-10 08:00 | 2015-04-10 09:00 |
| 14 | 1.1.6.6 | Pruebas de Alta disponibilidad | manual | 3h | 2015-04-10 08:00 | 2015-04-10 11:00 |
| 15 | 1.1.7 | **Migración de Servidores físicos a Virtual (tiempo por server)** |  | 3.88d | 2015-04-14 08:00 | 2015-04-17 17:00 |
| 16 | 1.1.7.1 | Sanity Boot de Servidor (Chequeo de partida normal) | manual | 30min | 2015-04-14 08:00 | 2015-04-14 08:30 |
| 17 | 1.1.7.2 | Instalación de Agente Vmware Converter | manual | 1h | 2015-04-14 08:00 | 2015-04-14 09:00 |
| 18 | 1.1.7.3 | Inicio del proceso de converter | manual | 10min | 2015-04-14 08:00 | 2015-04-14 08:10 |
| 19 | 1.1.7.4 | Clonación de discos hacia ambiente virtual (Depende de la velocidad de proceso. No se puede determinar una tiempo exacto) | manual | 8h | 2015-04-14 08:00 | 2015-04-14 18:00 |
| 20 | 1.1.7.5 | Chequeo de estado de copia | manual | 2h | 2015-04-14 08:00 | 2015-04-14 10:00 |
| 21 | 1.1.7.6 | Inicio de máquina Virtual e instalación Vmware tools | manual | 1h | 2015-04-14 08:00 | 2015-04-14 09:00 |
| 22 | 1.1.7.7 | Startup de maquina virtual y chequeo de servicio | manual | 2h | 2015-04-14 08:00 | 2015-04-14 10:00 |
| 23 | 1.1.7.8 | Validación de servicio por parte de Tagler | manual | 1d? | 2015-04-14 08:00 | 2015-04-14 18:00 |
| 24 | 1.2 | **Informes y capacitación** |  | 3.88d | 2015-04-20 08:00 | 2015-04-23 17:00 |
| 25 | 1.2.1 | Capacitación ambiente Vmware y Storage | manual | 3h | 2015-04-20 08:00 | 2015-04-20 11:00 |
| 26 | 1.2.2 | Documentación técnica de la plataforma instalada | manual | 2d | 2015-04-20 08:00 | 2015-04-21 18:00 |

| ID | WBS | Task | Type | Duration | Start | Finish |
| --- | --- | --- | --- | --- | --- | --- |
| 27 | 2 | **Tareas de Analisis Active Directory** |  | 5d | 2015-04-08 08:00 | 2015-04-14 18:00 |
| 28 | 2.1 | **Levantamiento de estructura AD** |  | 5d | 2015-04-08 08:00 | 2015-04-14 18:00 |
| 29 | 2.1.1 | Estructura de la organización | manual | 1d | 2015-04-08 08:00 | 2015-04-08 18:00 |
| 30 | 2.1.2 | Definición de Forest y diseño de dominio | manual | 1d | 2015-04-08 08:00 | 2015-04-08 18:00 |
| 31 | 2.1.3 | Estado de Implementación de servidores | manual | 1d | 2015-04-08 08:00 | 2015-04-08 18:00 |
| 32 | 2.1.4 | Distribución de Roles FSMO | manual | 1d | 2015-04-08 08:00 | 2015-04-08 18:00 |
| 33 | 2.1.5 | Distribución de Sitios Active Diretory | manual | 1d | 2015-04-08 08:00 | 2015-04-08 18:00 |
| 34 | 2.1.6 | SubRedes Asociadas a Site and Services | manual | 1d | 2015-04-08 08:00 | 2015-04-08 18:00 |
| 35 | 2.1.7 | Definición de Global Catalog Server | manual | 1d | 2015-04-08 08:00 | 2015-04-08 18:00 |
| 36 | 2.1.8 | Esquema de Replicación FRS | manual | 1d | 2015-04-08 08:00 | 2015-04-08 18:00 |
| 37 | 2.1.9 | Relaciones de Confianza | manual | 1d | 2015-04-08 08:00 | 2015-04-08 18:00 |
| 38 | 2.1.10 | Levantamiento de cuentas de usuarios | manual | 1d | 2015-04-08 08:00 | 2015-04-08 18:00 |
| 39 | 2.1.11 | Pruebas de sistemas | manual | 1d | 2015-04-08 08:00 | 2015-04-08 18:00 |
| 40 | 2.1.12 | Estructura Jerárquica de Unidades Organizacionales | manual | 1d | 2015-04-08 08:00 | 2015-04-08 18:00 |
| 41 | 2.1.13 | Grupos de Dominio (Seguridad, Dominio Local, Universales, Distribución) | manual | 1d | 2015-04-08 08:00 | 2015-04-08 18:00 |
| 42 | 2.1.14 | Servicios Cores DNS, DHCP, WINS | manual | 1d | 2015-04-08 08:00 | 2015-04-08 18:00 |
| 43 | 2.1.15 | Políticas de Seguridad de Dominio | manual | 1d | 2015-04-08 08:00 | 2015-04-08 18:00 |
| 44 | 2.2 | Documentación de Levantamiento y propuesta de mejoras | manual | 1d | 2015-04-14 08:00 | 2015-04-14 18:00 |
