# Diseño Plataforma WEB - Plan de Trabajo V1

Schedule from MS Project, 2020-02-19 to 2020-08-31, status date 2020-04-01, A marks actual dates.

## Calendars

- Estándar: Mon-Fri 09:00-13:00, 15:00-19:00; Sat-Sun off. Exceptions (off unless hours are given): 2020-05-01, 2020-05-21, 2020-06-29, 2020-07-16.

## Resources

| Resource |
| --- |
| JP_ENTEL |
| Everis |
| Operaciones |

## Schedule

| ID | WBS | Task | Type | Duration | Start | Finish | Predecessors | Complete | Remaining | Total slack | Constraint | Avance Esperado | HH | Porcentaje Esperado |
| --- | --- | --- | --- | --- | --- | --- | --- | --- | --- | --- | --- | --- | --- | --- |
| 1 | 1 | **Desarrollo Portal AIM QB2** |  | 134.5d | 2020-02-19 A | 2020-08-31 |  | 62% | 51.35d | 0d |  | 100% | 1210,5 | 42% |
| 2 | 1.1 | **Coordinación Interna** |  | 0d | 2020-02-19 A | 2020-02-19 A |  | 100% |  |  |  | 100% |  | 100% |
| 3 | 1.1.1 | Notificación Comercial | milestone | 0d | 2020-02-19 A | 2020-02-19 A |  | 100% |  |  | start no earlier than 2019-09-09 | 0% |  | Estándar |
| 4 | 1.1.2 | Coordinación Project Management | milestone | 0d | 2020-02-19 A | 2020-02-19 A | 3 | 100% |  |  |  | 0% |  | Estándar |
| 5 | 1.1.3 | Reunión Partners (ActiveTrainer/InnovaSis) | milestone | 0d | 2020-02-19 A | 2020-02-19 A |  | 100% |  |  | start no earlier than 2019-09-10 | 0% |  | Estándar |
| 6 | 1.1.4 | Reunión Teck (KOM) | milestone | 0d | 2020-02-19 A | 2020-02-19 A | 5 | 100% |  |  | finish no earlier than 2019-09-12 | 0% |  | Estándar |
| 7 | 1.4 | **Ingeniería de diseño** |  | 57.5d | 2020-02-19 A | 2020-05-11 A |  | 100% |  |  |  | 100% | 517,5 | 100% |
| 8 | 1.4.1 | **Levantamiento** |  | 57.5d | 2020-02-19 A | 2020-05-11 A |  | 100% |  |  |  | 100% | 517,5 | 100% |
| 9 | 1.4.1.1 | Hito 0: Inicio oficial del proyecto | milestone | 0d | 2020-02-19 A | 2020-02-19 A |  | 100% |  |  | start no earlier than 2020-02-19 | 100% |  | 100% |
| 10 | 1.2.1.2 | **Tiempo entrega equipos y cuentas** |  | 25d | 2020-03-04 A | 2020-04-07 A |  | 100% |  |  |  | 100% | 225 | 100% |
| 11 | 1.2.1.2.1 | Entrega de equipos |  | 1d | 2020-03-04 A | 2020-03-04 A | 9FS+10d | 100% |  |  |  | 100% |  | 100% |
| 12 | 1.2.1.2.2 | Acceso al ambiente QA SPF |  | 1d | 2020-03-05 A | 2020-03-05 A | 11 | 100% |  |  |  | 100% |  | 100% |
| 13 | 1.2.1.2.3 | Acceso SP (ORMS y otros sitios) |  | 1d | 2020-03-05 A | 2020-03-05 A | 11 | 100% |  |  |  | 100% |  | 100% |
| 14 | 1.2.1.2.4 | Acceso servidores SPF (Aplicativo) |  | 1d | 2020-04-07 A | 2020-04-07 A | 11FS+23d | 100% |  |  |  | 100% |  | 100% |
| 15 | 1.2.1.2.5 | Acceso servidores SPF (Base de datos) |  | 1d | 2020-04-07 A | 2020-04-07 A | 11FS+23d | 100% |  |  |  | 100% |  | 100% |
| 16 | 1.2.1.3 | Análisis situación actual Smart Plan Fusión |  | 5d | 2020-03-06 A | 2020-03-12 A | 14 | 100% |  |  |  | 100% | 45 | 100% |
| 17 | 1.4.1.1 | Análisis situación actual SharePoint |  | 5d | 2020-03-06 A | 2020-03-12 A | 15 | 100% |  |  |  | 100% | 45 | 100% |
| 18 | 1.2.1.5 | Levantamiento Funcional |  | 3d | 2020-03-06 A | 2020-03-12 A | 15 | 100% |  |  |  | 100% | 27 | 100% |
| 19 | 1.4.1.1 | Levantamiento UX Intefaz Gráfica |  | 3d | 2020-03-06 A | 2020-03-11 A | 15 | 100% |  |  |  | 100% | 27 | 100% |
| 20 | 1.2.1.7 | Levantamiento de Workflows |  | 1d | 2020-03-11 A | 2020-03-12 A | 19 | 100% |  |  |  | 100% |  | 100% |
| 21 | 1.2.1.8 | Análisis estructura OR |  | 1d | 2020-03-11 A | 2020-03-12 A | 19 | 100% |  |  |  | 100% |  | 100% |
| 22 | 1.4.1.1 | Análisis taxonimia OR |  | 3d | 2020-03-11 A | 2020-03-16 A | 19 | 100% |  |  |  | 100% | 27 | 100% |
| 23 | 1.4.1.1 | Diseño metadata operaciones |  | 3d | 2020-03-16 A | 2020-03-18 A | 22 | 100% |  |  |  | 100% | 27 | 100% |
| 24 | 1.4.1.1 | **Levantamiento arquitectuta SP operaciones** |  | 1d | 2020-03-26 A | 2020-03-26 A |  | 100% |  |  |  | 100% |  | 100% |
| 25 | 1.2.1.11.1 | Entrega de Estructura de Carpetas (Maria Gonzalés) |  | 1d | 2020-03-26 A | 2020-03-26 A | 23FS+5d | 100% |  |  |  | 100% |  | 100% |
| 26 | 1.2.1.11.2 | Entrega de Metadata (Maria Gonzalés) |  | 1d | 2020-03-26 A | 2020-03-26 A | 23FS+5d | 100% |  |  |  | 100% |  | 100% |
| 27 | 1.2.1.12 | Analisis migración de datos desde SPF a SP |  | 2d | 2020-03-10 A | 2020-04-22 A | 14FS+10d, 15FS+10d | 100% |  |  |  | 100% | 18 | 100% |
| 28 | 1.2.1.13 | Analisis ambiente SPA QA |  | 1d | 2020-03-10 A | 2020-04-22 A | 14FS+10d, 15FS+10d | 100% |  |  |  | 100% |  | 100% |

| ID | WBS | Task | Type | Duration | Start | Finish | Predecessors | Complete | Remaining | Total slack | Avance Esperado | HH | Porcentaje Esperado |
| --- | --- | --- | --- | --- | --- | --- | --- | --- | --- | --- | --- | --- | --- |
| 29 | 1.2.1.14 | **Generación de propuesta y planificación de Sprints** |  | 35.5d | 2020-03-20 A | 2020-05-11 A |  | 100% |  |  | 100% | 319,5 | 100% |
| 30 | 1.2.1.14.1 | Generación SOW |  | 5d | 2020-03-20 A | 2020-04-24 A | 24, 27, 28 | 100% |  |  | 100% | 45 | 100% |
| 31 | 1.2.1.14.2 | Entraga y periodo de aprobación SOW |  | 5d | 2020-05-04 A | 2020-05-11 A | 30FS+5d | 100% |  |  | 100% | 45 | 100% |
| 32 | 1.2.1.14.3 | Hito 1: Fin levantamiento e Incio etapa de desarrollo | milestone | 0d | 2020-05-11 A | 2020-05-11 A | 31 | 100% |  |  | 0% |  |  |
| 33 | 1.4 | **Construcción (Desarrollo)** |  | 58d | 2020-05-11 A | 2020-08-04 |  | 58% | 24.51d | 19d | 100% | 522 | 19% |
| 34 | 1.3.1 | Revision cometarios expertos en gestios documental TECK |  | 1d | 2020-05-11 A | 2020-05-12 A | 32 | 100% |  |  | 0% |  |  |
| 35 | 1.4.1 | **Preparación de ambiente** |  | 2d | 2020-05-12 A | 2020-05-14 A |  | 100% |  |  | 0% | 18 |  |
| 36 | 1.4.1.1 | Configuración y disponibilización del sitio de publicación PROD/TEST |  | 2d | 2020-05-12 A | 2020-05-14 A | 34 | 100% |  |  | 0% | 18 | Estándar |
| 37 | 1.3.3 | **Migración de prueba desde SPF a SP** |  | 7d | 2020-05-14 A | 2020-05-26 A |  | 100% |  |  | 0% | 63 |  |
| 38 | 1.3.3.1 | Analisis documento Matriz vendor Data Term |  | 1d | 2020-05-14 A | 2020-05-15 A | 35 | 100% |  |  | 0% |  |  |
| 39 | 1.3.3.2 | Extraccion y clasificacion de documentos relacionados a cada DDR |  | 1d | 2020-05-14 A | 2020-05-15 A | 35 | 100% |  |  | 0% |  |  |
| 40 | 1.3.3.3 | Extraccion de TAG a migrar |  | 1d | 2020-05-14 A | 2020-05-15 A | 35 | 100% |  |  | 0% |  |  |
| 41 | 1.3.3.4 | Generar reporte de TAG |  | 1d | 2020-05-14 A | 2020-05-15 A | 35 | 100% |  |  | 0% |  |  |
| 42 | 1.3.3.5 | Generar reporte de relaciones DOC - DOC. TAG-TAG, DOC-TAG |  | 1d | 2020-05-14 A | 2020-05-15 A | 35 | 100% |  |  | 0% |  |  |
| 43 | 1.3.3.6 | Extraccion de archivos PDF de documentos |  | 1d | 2020-05-14 A | 2020-05-15 A | 35 | 100% |  |  | 0% |  |  |
| 44 | 1.3.3.7 | Preparacion planilla de carga para documentos y tag |  | 2d | 2020-05-14 A | 2020-05-18 A | 35 | 100% |  |  | 0% | 18 |  |
| 45 | 1.3.3.8 | Realizar carga de documentos en SP |  | 5d | 2020-05-18 A | 2020-05-26 A | 44 | 100% |  |  | 0% | 45 |  |
| 46 | 1.3.3.9 | Crear insfraestructura para migración (carpetas compratidas) |  | 1d | 2020-05-18 A | 2020-05-19 A | 36, 44 | 100% |  |  | 0% |  |  |
| 47 | 1.3.3.10 | Crear workflow para lectura y carga de XML y archivos |  | 3d | 2020-05-18 A | 2020-05-22 A | 36, 44 | 100% |  |  | 0% | 27 |  |
| 48 | 1.3.4 | Hito 2: Entregable primer Sprint Migracion de los 6206 documentos y revision por parte de TECK |  | 3d | 2020-05-22 A | 2020-05-27 A | 47 | 100% |  |  | 0% | 27 |  |
| 49 | 1.4.6 | **Contrucción Estructura para sitio OIM** |  | 55d | 2020-05-14 A | 2020-08-04 |  | 48% | 28.53d | 19d | 0% | 495 |  |
| 50 | 1.3.5.1 | **Modelamiento y configuracion de librerias** |  | 11d | 2020-05-14 A | 2020-06-01 A |  | 100% |  |  | 0% | 99 |  |
| 51 | 1.4.6.1 | Creación de Sitio de publicacion |  | 1d | 2020-05-14 A | 2020-05-15 A | 34, 36 | 100% |  |  | 0% |  | Estándar |
| 52 | 1.3.5.1.2 | Configuración de Tipos de contenido (Metadata) necesario para los distintos tipos de documentos |  | 3d | 2020-05-15 A | 2020-05-20 A | 51 | 100% |  |  | 0% | 27 | Estándar |
| 53 | 1.3.5.1.3 | Creación de Librerías |  | 2d | 2020-05-20 A | 2020-05-25 A | 52 | 100% |  |  | 0% | 18 | Estándar |
| 54 | 1.3.5.1.4 | Asignación de permisos a librería y configuración de versionamiento |  | 3d | 2020-05-25 A | 2020-05-28 A | 53 | 100% |  |  | 0% | 27 |  |
| 55 | 1.3.5.1.5 | Creación de listas Sharepoint de apoyo, necesarias para mantención de definiciones de áreas y superintendencias |  | 2d | 2020-05-28 A | 2020-06-01 A | 54 | 100% |  |  | 0% | 18 |  |

| ID | WBS | Task | Type | Duration | Start | Finish | Predecessors | Complete | Remaining | Total slack | Free slack | Avance Esperado | HH |
| --- | --- | --- | --- | --- | --- | --- | --- | --- | --- | --- | --- | --- | --- |
| 56 | 1.3.5.2 | **Construccion de vistas y modelos para primer Sprint** |  | 18d | 2020-06-01 A | 2020-06-25 A |  | 100% |  |  |  | 0% | 162 |
| 57 | 1.3.5.2.1 | Creacion pantalla bienvenida |  | 3d | 2020-06-01 A | 2020-06-04 A | 55 | 100% |  |  |  | 0% | 27 |
| 58 | 1.3.5.2.2 | Creacion pantalla busqueda simple |  | 3d | 2020-06-04 A | 2020-06-09 A | 57 | 100% |  |  |  | 0% | 27 |
| 59 | 1.3.5.2.3 | Generación de bibliotecas basicas para manejo de archivos |  | 5d | 2020-06-09 A | 2020-06-16 A | 58 | 100% |  |  |  | 0% | 45 |
| 60 | 1.3.5.2.4 | Creación pantalla visualizar documentos |  | 5d | 2020-06-16 A | 2020-06-23 A | 59 | 100% |  |  |  | 0% | 45 |
| 61 | 1.3.5.2.5 | Generación funcionalidad perfilamiento por areas |  | 2d | 2020-06-23 A | 2020-06-25 A | 60 | 100% |  |  |  | 0% | 18 |
| 62 | 1.3.5.3 | **Construccion de rutinas API SP y vistas** |  | 7d | 2020-06-25 A | 2020-07-07 A |  | 100% |  |  |  | 0% | 63 |
| 63 | 1.3.5.3.1 | Desarrollo rutinas API para busqueda y carga de documentos |  | 3d | 2020-06-25 A | 2020-07-01 A | 61 | 100% |  |  |  | 0% | 27 |
| 64 | 1.3.5.3.2 | Creacion pantalla para previsualizar documentos |  | 2d | 2020-07-01 A | 2020-07-03 A | 63 | 100% |  |  |  | 0% | 18 |
| 65 | 1.3.5.3.3 | Validación de campos para carga de documentos |  | 3d | 2020-07-01 A | 2020-07-06 A | 63 | 100% |  |  |  | 0% | 27 |
| 66 | 1.3.5.3.4 | Creación pantalla para cargar documentos |  | 4d | 2020-07-01 A | 2020-07-07 A | 63 | 100% |  |  |  | 0% | 36 |
| 67 | 1.3.5.4 | Hito 3: Entregable segundo Sprint (Carga, busqueda simple y visualizacion de documentos) | milestone | 0d | 2020-07-07 A | 2020-07-07 A | 66 | 100% |  |  |  | 0% |  |
| 68 | 1.3.5.5 | Hito 4: Comienzo de pruebas y ajustes |  | 2d | 2020-07-07 A | 2020-07-09 A | 67 | 100% |  |  |  | 0% | 18 |
| 69 | 1.3.5.6 | **Creacion pantalla para gestionar carpetas** |  | 8d | 2020-07-06 A | 2020-07-17 |  | 70% | 2.4d | 0d |  | 0% | 72 |
| 70 | 1.3.5.6.1 | Crear carpeta |  | 2d | 2020-07-06 A | 2020-07-08 A | 65 | 100% |  |  |  | 0% | 18 |
| 71 | 1.3.5.6.2 | Modificar carpeta |  | 2d | 2020-07-08 A | 2020-07-10 A | 70 | 100% |  |  |  | 0% | 18 |
| 72 | 1.3.5.6.3 | Eliminar carpeta |  | 2d | 2020-07-10 A | 2020-07-14 | 71 | 80% | 0.4d | 0d |  | 0% | 18 |
| 73 | 1.3.5.6.4 | Recuperar carpeta |  | 2d | 2020-07-14 | 2020-07-17 | 72 |  |  | 0d |  | 0% | 18 |
| 74 | 1.3.5.7 | **Creación pantallas para busquedas avanzadas** |  | 17d | 2020-07-08 | 2020-08-03 |  |  |  | 20d |  | 0% | 153 |
| 75 | 1.3.5.7.1 | Creación pantalla de papelera de archivos y carpetas |  | 5d | 2020-07-08 | 2020-07-15 | 70 |  |  | 32d |  | 0% | 45 |
| 76 | 1.3.5.7.2 | Generación funcionalidad ultimas busquedas |  | 5d | 2020-07-10 | 2020-07-20 | 71 |  |  | 20d | 0d | 0% | 45 |
| 77 | 1.3.5.7.3 | Creación pantalla historial de busquedas |  | 5d | 2020-07-20 | 2020-07-27 | 76 |  |  | 20d | 0d | 0% | 45 |
| 78 | 1.3.5.7.4 | Creacion pantalla busqueda avanzada |  | 5d | 2020-07-27 | 2020-08-03 | 77 |  |  | 20d |  | 0% | 45 |
| 79 | 1.3.5.8 | **Funcionalidad de busqueda en otros sitios Sharepoint** |  | 5d | 2020-07-06 | 2020-07-13 |  |  |  | 34d |  | 0% | 45 |
| 80 | 1.3.5.8.1 | Generación logica de busqueda en otros sitios SharePoint |  | 5d | 2020-07-06 | 2020-07-13 | 65 |  |  | 34d |  | 0% | 45 |
| 81 | 1.3.5.8.2 | Configuración de listas para manejo de otros sitios en donde buscara el portal OIM |  | 2d | 2020-07-06 | 2020-07-08 | 65 |  |  | 37d |  | 0% | 18 |

| ID | WBS | Task | Type | Duration | Start | Finish | Predecessors | Total slack | Avance Esperado | HH | Porcentaje Esperado |
| --- | --- | --- | --- | --- | --- | --- | --- | --- | --- | --- | --- |
| 82 | 1.3.5.9 | **Funcionalidad para modificar metadata** |  | 3d | 2020-07-06 | 2020-07-09 |  | 36d | 0% | 27 |  |
| 83 | 1.3.5.9.1 | Editar metadata |  | 3d | 2020-07-06 | 2020-07-09 | 65 | 36d | 0% | 27 |  |
| 84 | 1.3.5.9.2 | Validar metadata |  | 2d | 2020-07-06 | 2020-07-08 | 65 | 37d | 0% | 18 |  |
| 85 | 1.3.5.10 | **Generación logica de exportacion de datos** |  | 10d | 2020-07-07 | 2020-07-22 |  | 7d | 0% | 90 |  |
| 86 | 1.3.5.10.1 | Tranformación de archivos a PDF |  | 3d | 2020-07-07 | 2020-07-10 | 66 | 35d | 0% | 27 |  |
| 87 | 1.3.5.10.2 | Generación logica para exportar resultado de busquedas |  | 3d | 2020-07-17 | 2020-07-22 | 69 | 0d | 0% | 27 |  |
| 88 | 1.3.5.11 | **Creacion pantalla favoritos a otros sistemas corporativos TECK** |  | 3d | 2020-07-22 | 2020-07-27 |  | 0d | 0% | 27 |  |
| 89 | 1.3.5.11.1 | Mantenedor sitios externos |  | 3d | 2020-07-22 | 2020-07-27 | 87 | 25d | 0% | 27 |  |
| 90 | 1.3.5.11.2 | Creacion pantalla favoritos |  | 3d | 2020-07-22 | 2020-07-27 | 87 | 0d | 0% | 27 |  |
| 91 | 1.3.5.12 | **Generación logica de manejo de archivos y metadata** |  | 6d | 2020-07-27 | 2020-08-04 |  | 0d | 0% | 54 |  |
| 92 | 1.3.5.12.1 | Logica de paginado de resultados |  | 1d | 2020-07-27 | 2020-07-28 | 90 | 0d | 0% |  |  |
| 93 | 1.3.5.12.2 | Logica para generar numero de documentos |  | 1d | 2020-07-28 | 2020-07-29 | 92 | 0d | 0% |  |  |
| 94 | 1.3.5.12.3 | Generacion funcionalidad para navegación de carpetas mediante Breadcrumbs |  | 1d | 2020-07-29 | 2020-07-30 | 93 | 0d | 0% |  |  |
| 95 | 1.3.5.12.4 | Creación logica de busquedas excluyentes (OR y AND) |  | 3d | 2020-07-30 | 2020-08-04 | 94 | 0d | 0% | 27 |  |
| 96 | 1.3.5.13 | Hito 5: Entregable tercer Sprint (Busqueda avanzada, Sitios favoritos, Editar metadata) | milestone | 0d | 2020-08-04 | 2020-08-04 | 95 | 0d | 0% |  | Estándar |
| 97 | 1.2.12 | **QA y Preparación para paso a producción** |  | 14d | 2020-08-04 | 2020-08-24 |  | 0d | 100% | 126 | 0% |
| 98 | 1.4.1 | **Pruebas** |  | 4d | 2020-08-04 | 2020-08-10 |  | 0d | 0% | 36 |  |
| 99 | 1.4.1.1 | Pruebas unitarias |  | 2d | 2020-08-04 | 2020-08-06 | 96 | 0d | 0% | 18 | Estándar |
| 100 | 1.4.1.2 | Ajustes y correcciones |  | 2d | 2020-08-06 | 2020-08-10 | 99 | 0d | 0% | 18 | Estándar |
| 101 | 1.4.2 | **Paso a producción** |  | 3d | 2020-08-10 | 2020-08-13 |  | 0d | 0% | 27 |  |
| 102 | 1.4.2.1 | Coordinación con area TI para Implantación de la solución |  | 1d | 2020-08-10 | 2020-08-11 | 100 | 0d | 0% |  | Estándar |
| 103 | 1.4.2.2 | Configuración/generacion de Scripts |  | 1d | 2020-08-11 | 2020-08-12 | 102 | 0d | 0% |  | Estándar |
| 104 | 1.4.2.3 | Pruebas de implantación |  | 1d | 2020-08-12 | 2020-08-13 | 103 | 0d | 0% |  | Estándar |
| 105 | 1.4.3 | **Capacitación** |  | 7d | 2020-08-13 | 2020-08-24 |  | 0d | 0% | 63 |  |
| 106 | 1.4.3.1 | **Gerneración de Documentación y ejecución** |  | 7d | 2020-08-13 | 2020-08-24 |  | 0d | 0% | 63 |  |
| 107 | 1.4.3.1.1 | Manual de usuario (Administrador y usuario operaciones) |  | 2d | 2020-08-13 | 2020-08-17 | 104 | 0d | 0% | 18 | Estándar |
| 108 | 1.4.3.1.2 | Generacion de documento (UAT) |  | 2d | 2020-08-17 | 2020-08-19 | 107 | 0d | 0% | 18 | Estándar |
| 109 | 1.4.3.1.3 | Realizacion de UAT por parte de TECK |  | 1d | 2020-08-19 | 2020-08-20 | 108 | 0d | 0% |  |  |
| 110 | 1.4.3.1.4 | Recepcion comentario en base a UAT |  | 1d | 2020-08-20 | 2020-08-21 | 109 | 0d | 0% |  |  |
| 111 | 1.4.3.1.5 | Evaluacion de correcciones |  | 1d | 2020-08-21 | 2020-08-24 | 110 | 0d | 0% |  |  |
| 112 | 1.5 | Hito 6: Entrega cuarto Sprint (Final) | milestone | 0d | 2020-08-19 | 2020-08-19 | 108 | 8d | 0% |  | Estándar |

| ID | WBS | Task | Type | Duration | Start | Finish | Predecessors | Total slack | Avance Esperado | HH | Porcentaje Esperado |
| --- | --- | --- | --- | --- | --- | --- | --- | --- | --- | --- | --- |
| 113 | 1.6 | **Puesta en marcha de la solucion** |  | 5d | 2020-08-24 | 2020-08-31 |  | 0d | 100% | 45 | 0% |
| 114 | 1.6.1 | Marcha Blanca |  | 5d | 2020-08-24 | 2020-08-31 | 97 | 0d | 0% | 45 | Estándar |
| 115 | 1.7 | Hito 7: Fin marcha blanca | milestone | 0d | 2020-08-31 | 2020-08-31 | 113 | 0d | 100% |  | 0% |
| 116 | 1.8 | Hito 8: Fin del Proyecto | milestone | 0d | 2020-08-31 | 2020-08-31 | 115 | 0d | 100% |  | 0% |
| 117 | 1.9 | Hito 9: Entrega de documentación completa (Inicio Capacitación) | milestone | 0d | 2020-08-31 | 2020-08-31 | 116 | 0d | 0% |  |  |
