# Crono-SixTailing

Schedule from MS Project, 2018-05-08 to 2018-07-27, A marks actual dates.
BHP Billiton

## Calendars

- Standard: Mon-Fri 08:00-12:00, 13:00-17:00; Sat-Sun off. Exceptions (off unless hours are given): 2018-05-21 (21 de Mayo), 2018-07-02 (2 de Julio), 2018-07-16 (Feriado 16 de Julio).

## Schedule

| ID | WBS | Task | Duration | Start | Finish | Predecessors | Complete | Remaining | Total slack | Free slack | Constraint |
| --- | --- | --- | --- | --- | --- | --- | --- | --- | --- | --- | --- |
| 1 | 1 | **Servicio Implementación Documentum** | 56d | 2018-05-08 A | 2018-07-27 |  | 24% | 42.35d |  |  |  |
| 2 | 1.1 | KOM | 1d | 2018-05-08 A | 2018-05-08 A |  | 100% |  |  |  | start no earlier than 2018-05-08 |
| 3 | 1.2 | **Sprint-1** | 19d | 2018-05-09 A | 2018-06-05 | 2 | 81% | 3.58d |  |  |  |
| 4 | 1.2.1 | Levantamiento de procesos | 8d | 2018-05-09 A | 2018-05-18 | 2 | 80% | 1.6d | 7.8d | 0d | finish no earlier than 2018-05-10 |
| 5 | 1.2.2 | Diseño de procesos | 11d | 2018-05-18 A | 2018-06-04 | 4 | 80% | 2.2d | 0d |  | start no earlier than 2018-05-11 |
| 6 | 1.2.3 | Sprint review | 0.5d | 2018-05-22 A | 2018-06-05 | 5 | 90% | 0.05d | 0d |  | start no earlier than 2018-05-15 |
| 7 | 1.2.4 | Sprint backlog refinning | 0.5d | 2018-05-22 A | 2018-06-05 | 6 | 80% | 0.1d | 0d |  |  |
| 8 | 1.2.5 | Entregable: Levantamiento de "Situación Actual" y Mapas de Proceso en metodología Six Sigma | 1d | 2018-05-23 A | 2018-06-05 | 7 | 99% | 0.01d | 0.84d | 0d |  |
| 9 | 1.3 | **Sprint-2** | 5d | 2018-06-05 | 2018-06-12 | 8 |  |  | 31.84d |  |  |
| 10 | 1.3.1 | **Diseño web** | 3d | 2018-06-05 | 2018-06-08 | 8 |  |  | 31.84d |  |  |
| 11 | 1.3.1.1 | **Front-end (buscador)** | 1.5d | 2018-06-05 | 2018-06-06 | 8 |  |  | 31.84d |  |  |
| 12 | 1.3.1.1.1 | Interfaz | 0.5d | 2018-06-05 | 2018-06-05 | 8 |  |  | 31.84d | 0d | start no earlier than 2018-05-17 |
| 13 | 1.3.1.1.2 | Búsqueda simple | 0.5d | 2018-06-05 | 2018-06-06 | 12 |  |  | 31.84d | 0d |  |
| 14 | 1.3.1.1.3 | Búsqueda avanzada | 0.5d | 2018-06-06 | 2018-06-06 | 13 |  |  | 31.84d | 0d |  |
| 15 | 1.3.1.2 | **Navegación** | 1.5d | 2018-06-06 | 2018-06-08 | 14 |  |  | 31.84d | 0d |  |
| 16 | 1.3.1.2.1 | Estándares | 0.5d | 2018-06-06 | 2018-06-07 | 14 |  |  | 31.84d | 0d |  |
| 17 | 1.3.1.2.2 | Small projects | 0.5d | 2018-06-07 | 2018-06-07 | 16 |  |  | 31.84d | 0d |  |
| 18 | 1.3.1.2.3 | Medium projects | 0.5d | 2018-06-07 | 2018-06-08 | 17 |  |  | 31.84d |  |  |
| 19 | 1.3.2 | Sprint review | 1d | 2018-06-08 | 2018-06-11 | 15 |  |  | 31.84d | 0d |  |
| 20 | 1.3.3 | Sprint backlog refinning | 1d | 2018-06-11 | 2018-06-12 | 19 |  |  | 31.84d |  |  |
| 21 | 1.4 | **Sprint-3** | 5d | 2018-06-05 | 2018-06-12 | 8 |  |  | 0.84d |  |  |
| 22 | 1.4.1 | **Desarrollo** | 3d | 2018-06-05 | 2018-06-08 | 8 |  |  | 0.84d |  |  |
| 23 | 1.4.1.1 | **Front-end (buscador)** | 3d | 2018-06-05 | 2018-06-08 | 8 |  |  | 0.84d | 0d |  |
| 24 | 1.4.1.1.1 | Interfaz | 1d | 2018-06-05 | 2018-06-06 | 8 |  |  | 0.84d | 0d |  |
| 25 | 1.4.1.1.2 | Búsqueda simple | 1d | 2018-06-06 | 2018-06-07 | 24 |  |  | 0.84d | 0d |  |
| 26 | 1.4.1.1.3 | Búsqueda avanzada | 1d | 2018-06-07 | 2018-06-08 | 25 |  |  | 0.84d |  |  |
| 27 | 1.4.2 | Sprint review | 0.5d | 2018-06-08 | 2018-06-08 | 23 |  |  | 0.84d | 0d |  |
| 28 | 1.4.3 | Sprint backlog refinning | 0.5d | 2018-06-08 | 2018-06-11 | 27 |  |  | 0.84d | 0d |  |
| 29 | 1.4.4 | Entregable (Hito de Pago 25%): Propuesta de Diseño Gráfico y Funciones: "Portal Knowledge Base BHP Technology" | 1d | 2018-06-11 | 2018-06-12 | 28 |  |  | 0.84d | 0d |  |

| ID | WBS | Task | Duration | Start | Finish | Predecessors | Total slack | Free slack |
| --- | --- | --- | --- | --- | --- | --- | --- | --- |
| 30 | 1.5 | **Sprint-4** | 4d | 2018-06-12 | 2018-06-18 | 29 | 0.84d |  |
| 31 | 1.5.1 | **Desarrollo** | 3d | 2018-06-12 | 2018-06-15 | 29 | 0.84d |  |
| 32 | 1.5.1.1 | **Front-end (buscador)** | 3d | 2018-06-12 | 2018-06-15 | 29 | 0.84d | 0d |
| 33 | 1.5.1.1.1 | Interfaz | 1d | 2018-06-12 | 2018-06-13 | 29 | 0.84d | 0d |
| 34 | 1.5.1.1.2 | Búsqueda simple | 1d | 2018-06-13 | 2018-06-14 | 33 | 0.84d | 0d |
| 35 | 1.5.1.1.3 | Búsqueda avanzada | 1d | 2018-06-14 | 2018-06-15 | 34 | 0.84d |  |
| 36 | 1.5.2 | Sprint review | 0.5d | 2018-06-15 | 2018-06-15 | 32 | 0.84d | 0d |
| 37 | 1.5.3 | Sprint backlog refinning | 0.5d | 2018-06-15 | 2018-06-18 | 36 | 0.84d | 0d |
| 38 | 1.6 | **Sprint-5** | 4d | 2018-06-18 | 2018-06-22 | 37 | 0.84d |  |
| 39 | 1.6.1 | **Desarrollo** | 3d | 2018-06-18 | 2018-06-21 | 37 | 0.84d |  |
| 40 | 1.6.1.1 | **Navegación** | 3d | 2018-06-18 | 2018-06-21 | 37 | 0.84d | 0d |
| 41 | 1.6.1.1.1 | Estándares | 1d | 2018-06-18 | 2018-06-19 | 37 | 0.84d | 0d |
| 42 | 1.6.1.1.2 | Small projects | 1d | 2018-06-19 | 2018-06-20 | 41 | 0.84d | 0d |
| 43 | 1.6.1.1.3 | Medium projects | 1d | 2018-06-20 | 2018-06-21 | 42 | 0.84d |  |
| 44 | 1.6.2 | Sprint review | 0.5d | 2018-06-21 | 2018-06-21 | 40 | 0.84d | 0d |
| 45 | 1.6.3 | Sprint backlog refinning | 0.5d | 2018-06-21 | 2018-06-22 | 44 | 0.84d | 0d |
| 46 | 1.7 | **Sprint-6** | 5d | 2018-06-22 | 2018-06-29 | 45 | 18.84d |  |
| 47 | 1.7.1 | **Desarrollo** | 3d | 2018-06-22 | 2018-06-27 | 45 | 18.84d |  |
| 48 | 1.7.1.1 | **Navegación** | 3d | 2018-06-22 | 2018-06-27 | 45 | 18.84d | 0d |
| 49 | 1.7.1.1.1 | Estándares | 1d | 2018-06-22 | 2018-06-25 | 45 | 18.84d | 0d |
| 50 | 1.7.1.1.2 | Small projects | 1d | 2018-06-25 | 2018-06-26 | 49 | 18.84d | 0d |
| 51 | 1.7.1.1.3 | Medium projects | 1d | 2018-06-26 | 2018-06-27 | 50 | 18.84d |  |
| 52 | 1.7.2 | Sprint review | 1d | 2018-06-27 | 2018-06-28 | 48 | 18.84d | 0d |
| 53 | 1.7.3 | Sprint backlog refinning | 1d | 2018-06-28 | 2018-06-29 | 52 | 18.84d |  |

| ID | WBS | Task | Duration | Start | Finish | Predecessors | Total slack | Free slack | Constraint |
| --- | --- | --- | --- | --- | --- | --- | --- | --- | --- |
| 54 | 1.8 | **Sprint-7** | 6d | 2018-06-05 | 2018-06-13 | 8 | 30.84d |  |  |
| 55 | 1.8.1 | **Desarrollo** | 3d | 2018-06-05 | 2018-06-08 | 8 | 30.84d | 0d |  |
| 56 | 1.8.1.1 | Workflow 1 | 3d | 2018-06-05 | 2018-06-08 | 8 | 30.84d |  | start no earlier than 2018-06-05 |
| 57 | 1.8.2 | Sprint review | 1d | 2018-06-08 | 2018-06-11 | 55 | 30.84d | 0d |  |
| 58 | 1.8.3 | Sprint backlog refinning | 1d | 2018-06-11 | 2018-06-12 | 57 | 30.84d | 0d |  |
| 59 | 1.8.4 | Entregable (Hito de Pago 50%): Sistema Web "Portal Knowledge Base BHP Technology" operando en red de BHP | 1d | 2018-06-12 | 2018-06-13 | 58 | 30.84d |  |  |
| 60 | 1.9 | **Sprint-8** | 4d | 2018-06-22 | 2018-06-28 | 45 | 0.84d |  |  |
| 61 | 1.9.1 | **Desarrollo** | 3d | 2018-06-22 | 2018-06-27 | 45 | 0.84d | 0d |  |
| 62 | 1.9.1.1 | Workflow 2 | 3d | 2018-06-22 | 2018-06-27 | 45 | 0.84d |  |  |
| 63 | 1.9.2 | Sprint review | 0.5d | 2018-06-27 | 2018-06-27 | 61 | 0.84d | 0d |  |
| 64 | 1.9.3 | Sprint backlog refinning | 0.5d | 2018-06-27 | 2018-06-28 | 63 | 0.84d | 0d |  |
| 65 | 1.10 | **Sprint-9** | 5d | 2018-06-28 | 2018-07-06 | 64 | 0.84d |  |  |
| 66 | 1.10.1 | **Desarrollo** | 3d | 2018-06-28 | 2018-07-04 | 64 | 0.84d | 0d |  |
| 67 | 1.10.1.1 | Workflow 3 | 3d | 2018-06-28 | 2018-07-04 | 64 | 0.84d |  |  |
| 68 | 1.10.2 | Sprint review | 1d | 2018-07-04 | 2018-07-05 | 66 | 0.84d | 0d |  |
| 69 | 1.10.3 | Sprint backlog refinning | 1d | 2018-07-05 | 2018-07-06 | 68 | 0.84d | 0d |  |
| 70 | 1.11 | **Sprint-10** | 5d | 2018-07-06 | 2018-07-13 | 69 | 0.84d |  |  |
| 71 | 1.11.1 | **Desarrollo** | 3d | 2018-07-06 | 2018-07-11 | 69 | 0.84d | 0d |  |
| 72 | 1.11.1.1 | Workflow 4 | 3d | 2018-07-06 | 2018-07-11 | 69 | 0.84d |  |  |
| 73 | 1.11.2 | Sprint review | 1d | 2018-07-11 | 2018-07-12 | 71 | 0.84d | 0d |  |
| 74 | 1.11.3 | Sprint backlog refinning | 1d | 2018-07-12 | 2018-07-13 | 73 | 0.84d | 0d |  |
| 75 | 1.12 | **Sprint-11** | 3d | 2018-07-13 | 2018-07-19 | 74 | 0.84d |  |  |
| 76 | 1.12.1 | **Implementación** | 1d | 2018-07-13 | 2018-07-17 | 74 | 0.84d | 0d |  |
| 77 | 1.12.1.1 | Implementación | 1d | 2018-07-13 | 2018-07-17 | 74 | 0.84d |  |  |
| 78 | 1.12.2 | Paso a Producción | 1d | 2018-07-17 | 2018-07-18 | 76 | 0.84d | 0d |  |
| 79 | 1.12.3 | Entregable: Documento de soporte a usuarios | 1d | 2018-07-18 | 2018-07-19 | 78 | 0.84d | 0d |  |

| ID | WBS | Task | Type | Duration | Start | Finish | Predecessors | Total slack | Free slack |
| --- | --- | --- | --- | --- | --- | --- | --- | --- | --- |
| 80 | 1.13 | **Capacitación** |  | 1d | 2018-07-19 | 2018-07-20 | 79 | 0.84d |  |
| 81 | 1.13.1 | Capacitación usuarios |  | 0.5d | 2018-07-19 | 2018-07-19 | 79 | 0.84d | 0d |
| 82 | 1.13.2 | Capacitación administradores |  | 0.5d | 2018-07-19 | 2018-07-20 | 81 | 0.84d | 0d |
| 83 | 1.14 | **Marcha Blanca** |  | 5d | 2018-07-20 | 2018-07-27 | 82 | 0.84d |  |
| 84 | 1.14.1 | Validación Ambiente Productivo |  | 3d | 2018-07-20 | 2018-07-25 | 82 | 0.84d | 0d |
| 85 | 1.14.2 | Apoyo y Seguimiento en el Proyecto |  | 2d | 2018-07-25 | 2018-07-27 | 84 | 0.84d |  |
| 86 | 1.15 | Hito de Pago Final, 25% restante | manual | 1d? | 2018-05-08 | 2018-05-08 |  |  |  |
