# Proyecto ModuloCobranzas-SAPB1_v5.1

Schedule from MS Project, 2014-11-10 to 2014-12-23, 9 hours a day.
Barrick Gold Corporation

## Calendars

- Standard: Mon-Fri 08:00-12:00, 13:00-17:00; Sat-Sun off. Exceptions (off unless hours are given): 2014-12-08 (Asuncion de la Virgen).

## Resources

| Resource |
| --- |
| PM |
| QA |
| ADM |
| IC |
| KU |
| ED |

## Schedule

| ID | WBS | Task | Duration | Start | Finish | Predecessors | Total slack | Free slack | Constraint | Resources | Work |
| --- | --- | --- | --- | --- | --- | --- | --- | --- | --- | --- | --- |
| 1 | 1 | Reunion de Partida ("Kickoff") | 2h | 2014-11-10 09:00 | 2014-11-10 11:00 |  | 0d |  | start no earlier than 2014-11-10 09:00 | PM; QA; ADM; IC | 8h |
| 2 | 2 | **Levantamiento** | 0.89d | 2014-11-10 11:00 | 2014-11-11 11:00 |  | 0d |  |  |  | 12h |
| 3 | 2.1 | Levantamiento Cliente | 4h | 2014-11-10 11:00 | 2014-11-10 16:00 | 1 | 0d |  |  | PM | 4h |
| 4 | 2.2 | Levantamiento Equipo de Desarrollo (ED) | 4h | 2014-11-10 16:00 | 2014-11-11 11:00 | 3 | 0d |  |  | ED | 4h |
| 5 | 2.3 | Levantamiento Equipo de Desarrollo (PM) | 4h | 2014-11-10 16:00 | 2014-11-11 11:00 | 4SS | 0d |  |  | PM | 4h |
| 6 | 3 | Ánalisis Técnico (ED) | 24h | 2014-11-11 11:00 | 2014-11-14 11:00 | 5 | 0d |  |  | ED | 24h |
| 7 | 4 | **Prototipo (Firma Cliente)** | 2d | 2014-11-14 11:00 | 2014-11-18 14:00 |  | 0d |  |  |  | 2h |
| 8 | 4.1 | Diseño Funcional de Prototipo (sin gráfica) | 16h | 2014-11-14 11:00 | 2014-11-18 11:00 | 6 | 0d |  |  |  |  |
| 9 | 4.2 | Revisión Prototipo | 2h | 2014-11-18 11:00 | 2014-11-18 14:00 | 8 | 0d |  |  | PM | 2h |
| 10 | 5 | **Diseño Base de Datos Local** | 3d? | 2014-11-18 14:00 | 2014-11-21 17:00 |  | 0d |  |  |  | 24h |
| 11 | 5.1 | Diseño Lógico | 0.89d? | 2014-11-18 14:00 | 2014-11-19 14:00 | 9 | 0d |  |  | ED [87.5%] | 7h |
| 12 | 5.2 | Diagrama DB en Visual Studio | 1d? | 2014-11-19 14:00 | 2014-11-20 15:00 | 11 | 0d |  |  | ED | 9h |
| 13 | 5.3 | Modelo de Datos VS | 0.89d? | 2014-11-20 15:00 | 2014-11-21 15:00 | 12 | 0d |  |  | ED [75%] | 6h |
| 14 | 5.4 | Revisión Final de Diseño | 2h | 2014-11-21 15:00 | 2014-11-21 17:00 | 13 | 0d |  |  | PM | 2h |
| 15 | 6 | **Desarrollo** | 10.89d? | 2014-11-24 08:00 | 2014-12-11 10:00 |  | 0d |  |  |  | 98h |
| 16 | 6.1 | Generación de Controladores | 12h | 2014-11-24 08:00 | 2014-11-25 12:00 | 14 | 0d |  |  | ED | 12h |
| 17 | 6.2 | Generación de Vistas | 0.56d? | 2014-11-25 13:00 | 2014-11-26 09:00 | 16 | 0d |  |  | ED | 5h |
| 18 | 6.3 | Desarrollo de Funciones Adicionales | 1.33d? | 2014-11-26 09:00 | 2014-11-27 14:00 | 17 | 0d |  |  | ED | 12h |
| 19 | 6.4 | Diseño de Informes | 0.89d | 2014-11-27 14:00 | 2014-11-28 14:00 | 18 | 0d |  |  | ED | 8h |
| 20 | 6.5 | Ingreso de datos | 0.67d? | 2014-11-28 14:00 | 2014-12-01 11:00 | 19 | 0d |  |  | ED | 6h |
| 21 | 6.6 | Modificación de Datos | 0.67d? | 2014-12-01 11:00 | 2014-12-02 09:00 | 20 | 0d |  |  | ED | 6h |
| 22 | 6.7 | **Diseño Web** | 5.44d? | 2014-12-02 09:00 | 2014-12-11 10:00 |  | 7.78d |  |  |  | 49h |
| 23 | 6.7.1 | Diseño Prototipo Web | 31h | 2014-12-02 09:00 | 2014-12-05 17:00 | 21 | 7.78d | 0d |  | ED | 31h |
| 24 | 6.7.2 | Diseño CSS | 2d? | 2014-12-09 08:00 | 2014-12-11 10:00 | 23 | 7.78d |  |  | ED | 18h |

| ID | WBS | Task | Duration | Start | Finish | Predecessors | Total slack | Constraint | Resources | Work |
| --- | --- | --- | --- | --- | --- | --- | --- | --- | --- | --- |
| 25 | 7 | **Configuración Ambiente de pruebas (B1)** | 0.89d | 2014-12-02 09:00 | 2014-12-03 09:00 |  | 0d |  |  | 8h |
| 26 | 7.1 | Microsoft Windows 2008/2012 estándar-Des | 8h | 2014-12-02 09:00 | 2014-12-03 09:00 | 21 | 0d |  | ADM | 8h |
| 27 | 8 | **Pruebas de integración Queries** | 9.44d | 2014-12-03 09:00 | 2014-12-18 15:00 |  | 0d |  |  | 67h |
| 28 | 8.1 | Adaptación de Queries | 20h | 2014-12-03 09:00 | 2014-12-05 14:00 | 26 | 0d |  | ED [10%] | 2h |
| 29 | 8.2 | Pruebas de Conección a SAP B1 | 20h | 2014-12-05 14:00 | 2014-12-11 09:00 | 28 | 0d |  | ED | 20h |
| 30 | 8.3 | Pruebas sistema completo | 45h | 2014-12-11 09:00 | 2014-12-18 15:00 | 29 | 0d |  | IC | 45h |
| 31 | 9 | **Configuración Servidor de Producción** | 0.44d | 2014-12-18 15:00 | 2014-12-19 10:00 |  | 0d |  |  | 2h |
| 32 | 9.1 | Microsoft Windows 2008/2012 estándar-Prod | 2h | 2014-12-18 15:00 | 2014-12-18 17:00 | 30 | 0d |  | ADM | 2h |
| 33 | 9.2 | Implementa Paso a Producción | 2h | 2014-12-19 08:00 | 2014-12-19 10:00 | 32 | 0d |  |  |  |
| 34 | 10 | **Pruebas en producción** | 1d | 2014-12-19 10:00 | 2014-12-22 11:00 |  | 0d |  |  |  |
| 35 | 10.1 | Pruebas en Producción | 4.5h | 2014-12-19 10:00 | 2014-12-19 15:30 | 33 | 0d |  |  |  |
| 36 | 10.2 | Supervisión de pruebas en Producción * | 4.5h | 2014-12-19 15:30 | 2014-12-22 11:00 | 35 | 0d |  |  |  |
| 37 | 11 | Manuales y Documentación Sistema | 10h | 2014-12-18 15:00 | 2014-12-19 17:00 | 30 | 1.78d |  | QA | 10h |
| 38 | 12 | **Paso a Producción** | 0.44d | 2014-12-22 11:00 | 2014-12-22 16:00 |  | 0d |  |  | 4h |
| 39 | 12.1 | Supervisión de Paso a Producción | 2h | 2014-12-22 11:00 | 2014-12-22 14:00 | 36 | 0d |  | PM | 2h |
| 40 | 12.2 | Prueba en Producción | 1h | 2014-12-22 14:00 | 2014-12-22 15:00 | 39 | 0d |  | QA | 1h |
| 41 | 12.3 | Aprobación Sistema en Producción | 1h | 2014-12-22 15:00 | 2014-12-22 16:00 | 40 | 0d |  | KU | 1h |
| 42 | 13 | Generacion Documentacion Desarrollo | 53h | 2014-11-27 11:00 | 2014-12-05 18:00 | 15SS | 9.78d | finish no earlier than 2014-12-05 18:00 | QA | 53h |
| 43 | 14 | Capacitación / Entrenamiento | 9h | 2014-12-22 16:00 | 2014-12-23 17:00 | 41 | 0d |  | IC | 9h |
