# Planificación Inicial

Schedule from MS Project, 2016-02-03 to 2016-04-05, 9 hours a day.
Hewlett-Packard

## Calendars

- Estándar: Mon-Fri 09:00-13:00, 15:00-19:00; Sat-Sun off.

## Resources

| Resource |
| --- |
| PM |
| ED |
| TAG-LF |
| TAG-LT |
| QA |
| TAG-TR |
| TAG-SPO |
| DES-JAP |
| DES-OTR |

## Schedule

| ID | WBS | Task | Duration | Start | Finish | Predecessors | Total slack | Constraint | Resources | Work |
| --- | --- | --- | --- | --- | --- | --- | --- | --- | --- | --- |
| 1 | 1 | **Proyecto Sistema para formulación área Desarrollo Food** | 40d | 2016-02-03 09:00 | 2016-04-05 19:00 |  | 0d |  | PM | 12h |
| 2 | 1.1 | KickOff | 2h | 2016-02-03 09:00 | 2016-02-03 11:00 |  | 0d | start no earlier than 2016-02-03 09:00 | PM; TAG-LF; TAG-LT; TAG-SPO; ED; QA | 12h |
| 3 | 1.2 | **Análisis y Planificación** | 9.22d | 2016-02-03 11:00 | 2016-02-17 16:00 |  | 0d |  |  |  |
| 4 | 1.2.1 | Levantamiento de Requerimiento y reglas de Negocio con usuario clave | 2h | 2016-02-03 11:00 | 2016-02-03 13:00 | 2 | 0d |  |  |  |
| 5 | 1.2.2 | Revisión de Planillas excel, formularios y documentos útiles para el desarrollo | 1h | 2016-02-03 12:00 | 2016-02-03 13:00 | 4FF | 0d |  |  |  |
| 6 | 1.2.3 | **Diseño de Interfaces de usuario** | 4d | 2016-02-03 15:00 | 2016-02-09 19:00 |  | 0d |  |  |  |
| 7 | 1.2.3.1 | Mantendor de usuarios | 1h | 2016-02-03 15:00 | 2016-02-03 16:00 | 4, 5 | 0d |  |  |  |
| 8 | 1.2.3.2 | Página principal | 1h | 2016-02-03 16:00 | 2016-02-03 17:00 | 7 | 0d |  |  |  |
| 9 | 1.2.3.3 | Mantendor de Familias | 1h | 2016-02-03 17:00 | 2016-02-03 18:00 | 8 | 0d |  |  |  |
| 10 | 1.2.3.4 | Mantenedor de Clientes | 1h | 2016-02-03 18:00 | 2016-02-03 19:00 | 9 | 0d |  |  |  |
| 11 | 1.2.3.5 | Mantenedor de Proveedores | 1h | 2016-02-04 09:00 | 2016-02-04 10:00 | 10 | 0d |  |  |  |
| 12 | 1.2.3.6 | Mantenedor de Productos | 1h | 2016-02-04 10:00 | 2016-02-04 11:00 | 11 | 0d |  |  |  |
| 13 | 1.2.3.7 | Mantenedor de Materias Primas | 1h | 2016-02-04 11:00 | 2016-02-04 12:00 | 12 | 0d |  |  |  |
| 14 | 1.2.3.8 | Mantenedor de Formulación | 2h | 2016-02-04 12:00 | 2016-02-04 16:00 | 13 | 0d |  |  |  |
| 15 | 1.2.3.9 | Página de control de versiones fórmulas (reporte simple) | 2h | 2016-02-04 16:00 | 2016-02-04 18:00 | 14 | 0d |  |  |  |
| 16 | 1.2.3.10 | Mantendor de Cotizaciones | 1h | 2016-02-04 18:00 | 2016-02-04 19:00 | 15 | 0d |  |  |  |
| 17 | 1.2.3.11 | Página de control de versiones Cotizaciones (reporte simple) | 2h | 2016-02-05 09:00 | 2016-02-05 11:00 | 16 | 0d |  |  |  |
| 18 | 1.2.3.12 | Mantenedor de Muestras de proveedores | 1h | 2016-02-05 11:00 | 2016-02-05 12:00 | 17 | 0d |  |  |  |
| 19 | 1.2.3.13 | Emisión de etiquetas área Desarrollo | 1h | 2016-02-05 12:00 | 2016-02-05 13:00 | 18 | 0d |  |  |  |
| 20 | 1.2.3.14 | Comparación de Formulas | 3h | 2016-02-05 15:00 | 2016-02-05 18:00 | 19 | 0d |  |  |  |
| 21 | 1.2.3.15 | Consolidación de fórmulas (manual) | 3h | 2016-02-05 18:00 | 2016-02-08 11:00 | 20 | 0d |  |  |  |
| 22 | 1.2.3.16 | Consolidación de fórmulas automático (reporte) | 2h | 2016-02-08 11:00 | 2016-02-08 13:00 | 21 | 0d |  |  |  |
| 23 | 1.2.3.17 | Mantendor de Reglas de Comparación (rangos aceptados) | 1h | 2016-02-08 15:00 | 2016-02-08 16:00 | 22 | 0d |  |  |  |
| 24 | 1.2.3.18 | Hoja de Productos o Materias primas | 1h | 2016-02-08 16:00 | 2016-02-08 17:00 | 23 | 0d |  |  |  |
| 25 | 1.2.3.19 | Mantenedor de Informe de Evaluación | 2h | 2016-02-08 17:00 | 2016-02-08 19:00 | 24 | 0d |  |  |  |
| 26 | 1.2.3.20 | Mantendor de Ficha Técnica | 2h | 2016-02-09 09:00 | 2016-02-09 11:00 | 25 | 0d |  |  |  |
| 27 | 1.2.3.21 | Página de búsqueda (seleccionar opciones) | 1h | 2016-02-09 11:00 | 2016-02-09 12:00 | 26 | 0d |  |  |  |
| 28 | 1.2.3.22 | Vista previa Etiquetas | 1h | 2016-02-09 12:00 | 2016-02-09 13:00 | 27 | 0d |  |  |  |
| 29 | 1.2.3.23 | Revisión Diseño (lider funcional) | 4h | 2016-02-09 15:00 | 2016-02-09 19:00 | 28 | 0d |  |  |  |
| 30 | 1.2.4 | Análisis Técnico de Requerimiento y Reglas de Negocios | 27h | 2016-02-10 09:00 | 2016-02-15 12:00 | 29 | 0d |  |  |  |
| 31 | 1.2.5 | Diseño Arquitectura del Sistema | 9h | 2016-02-15 12:00 | 2016-02-16 13:00 | 30 | 0d |  |  |  |
| 32 | 1.2.6 | Diseño de la Base de Datos del Sistema | 9h | 2016-02-16 15:00 | 2016-02-17 16:00 | 31 | 0d |  |  |  |
| 33 | 1.2.7 | Identificar Datos Relevantes de SAP | 9h | 2016-02-16 15:00 | 2016-02-17 16:00 | 32FF | 30.56d |  |  |  |

Notes:
- 26: Revisar que ocurrirá en caso de consolidaciones o inactivación de formulas

| ID | WBS | Task | Duration | Start | Finish | Predecessors | Total slack |
| --- | --- | --- | --- | --- | --- | --- | --- |
| 34 | 1.3 | **Desarrollo** | 24.56d | 2016-02-17 16:00 | 2016-03-28 11:00 |  | 0d |
| 35 | 1.3.1 | **Base de Datos** | 3.33d | 2016-02-17 16:00 | 2016-02-23 12:00 |  | 0d |
| 36 | 1.3.1.1 | Creación de Base de Datos Desarrollo | 5h | 2016-02-17 16:00 | 2016-02-18 11:00 | 32 | 0d |
| 37 | 1.3.1.2 | String de Conexión a la Base de datos | 1h | 2016-02-18 10:00 | 2016-02-18 11:00 | 36FF | 0d |
| 38 | 1.3.1.3 | Crear Datos para Desarrollo web | 5h | 2016-02-18 11:00 | 2016-02-18 18:00 | 37 | 0d |
| 39 | 1.3.1.4 | Pruebas y Correcciones | 5h | 2016-02-18 18:00 | 2016-02-19 13:00 | 38 | 0d |
| 40 | 1.3.1.5 | Duplicar Base de Datos desarrollo para pruebas | 1h | 2016-02-19 15:00 | 2016-02-19 16:00 | 39 | 0d |
| 41 | 1.3.1.6 | **Sincronización SAP** | 1.56d | 2016-02-19 16:00 | 2016-02-23 12:00 |  | 0d |
| 42 | 1.3.1.6.1 | Materias primas | 9h | 2016-02-19 16:00 | 2016-02-22 17:00 | 40 | 0d |
| 43 | 1.3.1.6.2 | Tipo de cambio (precio) | 2h | 2016-02-22 17:00 | 2016-02-22 19:00 | 42 | 0d |
| 44 | 1.3.1.6.3 | Clientes food | 1h | 2016-02-23 09:00 | 2016-02-23 10:00 | 43 | 0d |
| 45 | 1.3.1.6.4 | Proveedores food | 1h | 2016-02-23 10:00 | 2016-02-23 11:00 | 44 | 0d |
| 46 | 1.3.1.6.5 | Internaciones de materias primas | 1h | 2016-02-23 11:00 | 2016-02-23 12:00 | 45 | 0d |
| 47 | 1.3.2 | **Usuarios** | 0.33d | 2016-02-23 12:00 | 2016-02-23 17:00 |  | 0d |
| 48 | 1.3.2.1 | Lista de Usuarios | 1h | 2016-02-23 12:00 | 2016-02-23 13:00 | 46 | 0d |
| 49 | 1.3.2.2 | Permisos de usuario | 2h | 2016-02-23 15:00 | 2016-02-23 17:00 | 48 | 0d |
| 50 | 1.3.2.3 | Mantenedor de usuarios | 3h | 2016-02-23 12:00 | 2016-02-23 17:00 | 49FF | 0d |
| 51 | 1.3.3 | **Familia (Fórmulas, producto base y Materias primas)** | 0.44d | 2016-02-23 17:00 | 2016-02-24 11:00 |  | 0d |
| 52 | 1.3.3.1 | Lista de Familias | 1h | 2016-02-23 17:00 | 2016-02-23 18:00 | 50 | 0d |
| 53 | 1.3.3.2 | Mantenedor de Familias | 3h | 2016-02-23 18:00 | 2016-02-24 11:00 | 52 | 0d |
| 54 | 1.3.4 | **Clientes** | 1.11d | 2016-02-24 11:00 | 2016-02-25 13:00 |  | 0d |
| 55 | 1.3.4.1 | Lista de Clientes | 1h | 2016-02-24 11:00 | 2016-02-24 12:00 | 53 | 0d |
| 56 | 1.3.4.2 | Mantenedor de clientes | 3h | 2016-02-24 12:00 | 2016-02-24 17:00 | 55 | 0d |
| 57 | 1.3.4.3 | Informe de productos y formulas por cliente | 2h | 2016-02-24 17:00 | 2016-02-24 19:00 | 56 | 0d |
| 58 | 1.3.4.4 | Relación con el cliente (historial e ingreso de nuevos movimientos) | 2h | 2016-02-25 09:00 | 2016-02-25 11:00 | 57 | 0d |
| 59 | 1.3.4.5 | Agenda de Contactos del cliente | 2h | 2016-02-25 11:00 | 2016-02-25 13:00 | 58 | 0d |

| ID | WBS | Task | Duration | Start | Finish | Predecessors | Total slack |
| --- | --- | --- | --- | --- | --- | --- | --- |
| 60 | 1.3.5 | **Proveedores** | 1.11d | 2016-02-25 15:00 | 2016-02-26 17:00 |  | 0d |
| 61 | 1.3.5.1 | Lista de Proveedores | 1h | 2016-02-25 15:00 | 2016-02-25 16:00 | 59 | 0d |
| 62 | 1.3.5.2 | Mantenedor de Proveedores | 3h | 2016-02-25 16:00 | 2016-02-25 19:00 | 61 | 0d |
| 63 | 1.3.5.3 | Informe de productos por proveedor | 2h | 2016-02-26 09:00 | 2016-02-26 11:00 | 62 | 0d |
| 64 | 1.3.5.4 | Relación con el Proveedor (historial e ingreso de nuevos movimientos) | 2h | 2016-02-26 11:00 | 2016-02-26 13:00 | 63 | 0d |
| 65 | 1.3.5.5 | Agenda de Contactos del Proveedor | 2h | 2016-02-26 15:00 | 2016-02-26 17:00 | 64 | 0d |
| 66 | 1.3.6 | **Materias Primas** | 1d | 2016-02-26 17:00 | 2016-02-29 18:00 |  | 0d |
| 67 | 1.3.6.1 | Lista de Materias Primas | 1h | 2016-02-26 17:00 | 2016-02-26 18:00 | 59, 65 | 0d |
| 68 | 1.3.6.2 | Mantenedor de Materias Primas | 3h | 2016-02-26 18:00 | 2016-02-29 11:00 | 67 | 0d |
| 69 | 1.3.6.3 | Calcular costo de las materias primas según internaciones | 5h | 2016-02-29 11:00 | 2016-02-29 18:00 | 68 | 0d |
| 70 | 1.3.7 | **Ingreso de Productos (manual)** | 0.44d | 2016-02-29 18:00 | 2016-03-01 12:00 |  | 0d |
| 71 | 1.3.7.1 | Materias Primas | 2h | 2016-02-29 18:00 | 2016-03-01 10:00 | 69 | 0d |
| 72 | 1.3.7.2 | Muestras gratis de proveedores | 1h | 2016-03-01 10:00 | 2016-03-01 11:00 | 71 | 0d |
| 73 | 1.3.7.3 | Ingresar información nutricional de la materia prima | 1h | 2016-03-01 11:00 | 2016-03-01 12:00 | 72 | 0d |
| 74 | 1.3.8 | **Formulación** | 4.33d | 2016-03-01 12:00 | 2016-03-08 11:00 |  | 0d |
| 75 | 1.3.8.1 | **Mantenedor de Formulas** | 25h | 2016-03-01 12:00 | 2016-03-04 13:00 |  | 0d |
| 76 | 1.3.8.1.1 | Creación de formula | 1h | 2016-03-01 12:00 | 2016-03-01 13:00 | 73 | 0d |
| 77 | 1.3.8.1.2 | Modificación de formula | 2h | 2016-03-01 15:00 | 2016-03-01 17:00 | 76 | 0d |
| 78 | 1.3.8.1.3 | Inactivación de formula | 1h | 2016-03-01 17:00 | 2016-03-01 18:00 | 77 | 0d |
| 79 | 1.3.8.1.4 | Asociación de fichas técnicas | 1h | 2016-03-01 18:00 | 2016-03-01 19:00 | 78 | 0d |
| 80 | 1.3.8.1.5 | Asociación de informes de evaluación | 1h | 2016-03-02 09:00 | 2016-03-02 10:00 | 79 | 0d |
| 81 | 1.3.8.1.6 | Asociación de clientes | 1h | 2016-03-02 10:00 | 2016-03-02 11:00 | 80 | 0d |
| 82 | 1.3.8.1.7 | Asociación de familia | 1h | 2016-03-02 11:00 | 2016-03-02 12:00 | 81 | 0d |
| 83 | 1.3.8.1.8 | Asociación de fotográfias | 1h | 2016-03-02 12:00 | 2016-03-02 13:00 | 82 | 0d |
| 84 | 1.3.8.1.9 | Cuadro de recomendación | 2h | 2016-03-02 15:00 | 2016-03-02 17:00 | 83 | 0d |
| 85 | 1.3.8.1.10 | Valorización de la Materia prima (nacional y/o extranjero) | 5h | 2016-03-02 17:00 | 2016-03-03 12:00 | 84 | 0d |
| 86 | 1.3.8.1.11 | Valorización de Productos base por sus materias primas | 5h | 2016-03-03 12:00 | 2016-03-03 19:00 | 85 | 0d |
| 87 | 1.3.8.1.12 | Impresión de etiquetas | 4h | 2016-03-04 09:00 | 2016-03-04 13:00 | 86 | 20d |

Notes:
- 66: Considerar alergenos en los productos
- 71: Genera un correo solicitando productos al administrador Food para que ingrese en SAP el descuento de los productos que han sido solicitados por 'Desarrollo' / La idea es que a cada principio de mes el encargado de desarrollo reciba un comentario respecto a los productos utilizados y la necesidad de incrementar el stock para desarrollo / También cada vez que un producto se encuentre en un nivel critico de stock.

| ID | WBS | Task | Duration | Start | Finish | Predecessors | Total slack |
| --- | --- | --- | --- | --- | --- | --- | --- |
| 88 | 1.3.8.2 | **Información Nutricional** | 0.22d | 2016-03-04 09:00 | 2016-03-04 11:00 |  | 0d |
| 89 | 1.3.8.2.1 | Calcular información nutricional del Producto | 1h | 2016-03-04 09:00 | 2016-03-04 10:00 | 86 | 0d |
| 90 | 1.3.8.2.2 | Permitir ingreso de información nutricional de la Materia prima | 1h | 2016-03-04 10:00 | 2016-03-04 11:00 | 89 | 0d |
| 91 | 1.3.8.3 | Lista de Formulas (por defecto: Activas) | 2h | 2016-03-04 11:00 | 2016-03-04 13:00 | 90 | 0d |
| 92 | 1.3.8.4 | **Reporte de versiones por formula** | 0.44d | 2016-03-04 15:00 | 2016-03-04 19:00 |  | 0d |
| 93 | 1.3.8.4.1 | Control de cambios por versión | 1h | 2016-03-04 15:00 | 2016-03-04 16:00 | 91 | 0d |
| 94 | 1.3.8.4.2 | Identificación de formulas historicas | 1h | 2016-03-04 16:00 | 2016-03-04 17:00 | 93 | 0d |
| 95 | 1.3.8.4.3 | Identificación de formulas inactivas | 1h | 2016-03-04 17:00 | 2016-03-04 18:00 | 94 | 0d |
| 96 | 1.3.8.4.4 | Identificación de formulas utilizadas para la consolidación | 1h | 2016-03-04 18:00 | 2016-03-04 19:00 | 95 | 0d |
| 97 | 1.3.8.5 | Comparación de Formulas | 4h | 2016-03-07 09:00 | 2016-03-07 13:00 | 96 | 0d |
| 98 | 1.3.8.6 | Consolidación de fórmulas | 2h | 2016-03-07 15:00 | 2016-03-07 17:00 | 97 | 0d |
| 99 | 1.3.8.7 | Pruebas y Correcciones | 4h | 2016-03-07 17:00 | 2016-03-08 11:00 | 98 | 0d |
| 100 | 1.3.9 | **Cotización** | 0.56d | 2016-03-08 11:00 | 2016-03-08 18:00 |  | 0d |
| 101 | 1.3.9.1 | Lista de Cotizaciones Activas (sin Orden de Fabricación) | 1h | 2016-03-08 11:00 | 2016-03-08 12:00 | 99 | 0d |
| 102 | 1.3.9.2 | Crear Nueva Cotización | 2h | 2016-03-08 12:00 | 2016-03-08 16:00 | 101 | 0d |
| 103 | 1.3.9.3 | Seguimiento a Cotizaciones | 1h | 2016-03-08 16:00 | 2016-03-08 17:00 | 102 | 0d |
| 104 | 1.3.9.4 | Enviar Cotización por Correo | 1h | 2016-03-08 17:00 | 2016-03-08 18:00 | 103 | 0d |
| 105 | 1.3.10 | **Monedas y cambios diarios** | 0.22d | 2016-03-08 18:00 | 2016-03-09 10:00 |  | 0d |
| 106 | 1.3.10.1 | Formula de Conversión: USD a CLP | 2h | 2016-03-08 18:00 | 2016-03-09 10:00 | 104 | 0d |
| 107 | 1.3.10.2 | Formula de Conversión: EUR a USD | 1h | 2016-03-08 18:00 | 2016-03-08 19:00 | 106SS | 17.78d |
| 108 | 1.3.10.3 | Formula de Conversión: EUR a CLP | 1h | 2016-03-09 09:00 | 2016-03-09 10:00 | 106FF | 0d |
| 109 | 1.3.11 | **Perfiles de Usuario** | 5d | 2016-03-09 10:00 | 2016-03-16 17:00 |  | 0d |
| 110 | 1.3.11.1 | Usuario: Desarrollador | 9h | 2016-03-09 10:00 | 2016-03-10 11:00 | 108 | 0d |
| 111 | 1.3.11.2 | Usuario: Supervisión | 36h | 2016-03-10 11:00 | 2016-03-16 17:00 | 110 | 0d |

Notes:
- 91: Nombre Formula / Cliente / Costo de fabricación / Cantidad de Versiones / Versión / Tipo (Historica, consolidación, Creada por usuario) / Tipo consolidación (parcial, completa o automatica)
- 92: El reporte de de versiones corresponde a: / 1-. Reporte con: Nombre, ingredientes, cantidades, costo total de la fórmula (según el tipo de cambio utilizado para este fin), estado, nro Versión / 2-. Comparación de Versiones: / Dosis / Código Producto / Nombre Producto / Cantidad / Precio CLP y USD / - Se deben resaltar los productos que han tenido una variación, con diferentes colores que indique la acción realizada con cada uno de ellos. / Azul: productos eliminados / Verde: Producto cuya dosis y/o cantidad cambió en un bajo porcentaje / Amarillo: Producto cuya dosis y/o cantidad cambió en un porcentaje mediano / Rojo: Producto cuya dosis y/o cantidad cambió en un alto porcentaje / 3-. A continuación de la lista de prodcutos, debe indicar: / Usuario: que creó o modificó la versión / Fecha: de creación o modificación / Comentarios: control de cambios
- 97: La comparación de formulas, corresponde a formulas con diferente nombre y/o diferentes clientes / Considerar cantidad maxima de formulas a comparar / Señalizar con colores las celdas de las diferentes formulas / Cuadro Resumen (debe permitir seleccionar la formula y la versión que será comparada) / Nombre formula / Costo Fabricación / Versión Activa / Vesión a Comparar (activa por defecto, seleccionable) / Color identificatorio / Cuadro de Comparación / Dosis / Código / Nombre Producto / Cantidad / Costo por producto (CLP y USD)

| ID | WBS | Task | Type | Duration | Start | Finish | Predecessors | Total slack | Free slack |
| --- | --- | --- | --- | --- | --- | --- | --- | --- | --- |
| 112 | 1.3.12 | **Informes de Desarrollo** |  | 1.11d | 2016-03-16 17:00 | 2016-03-17 19:00 |  | 0d |  |
| 113 | 1.3.12.1 | **Informe de Evaluación** |  | 0.56d | 2016-03-16 17:00 | 2016-03-17 12:00 |  | 0d |  |
| 114 | 1.3.12.1.1 | Control de cambios por versión |  | 1h | 2016-03-16 17:00 | 2016-03-16 18:00 | 111 | 0d |  |
| 115 | 1.3.12.1.2 | Control de versiones |  | 1h | 2016-03-16 18:00 | 2016-03-16 19:00 | 114 | 0d |  |
| 116 | 1.3.12.1.3 | Cargar fotográfias |  | 1h | 2016-03-17 09:00 | 2016-03-17 10:00 | 115 | 0d |  |
| 117 | 1.3.12.1.4 | Activar o desactivar secciones del informe |  | 1h | 2016-03-17 10:00 | 2016-03-17 11:00 | 116 | 0d |  |
| 118 | 1.3.12.1.5 | Permitir exportación a PDF con formato estándar Tagler |  | 1h | 2016-03-17 11:00 | 2016-03-17 12:00 | 117 | 0d |  |
| 119 | 1.3.12.2 | **Ficha Técnica** |  | 0.56d | 2016-03-17 12:00 | 2016-03-17 19:00 |  | 0d |  |
| 120 | 1.3.12.2.1 | Control de cambios por versión |  | 1h | 2016-03-17 12:00 | 2016-03-17 13:00 | 118 | 0d |  |
| 121 | 1.3.12.2.2 | Control de versiones |  | 1h | 2016-03-17 15:00 | 2016-03-17 16:00 | 120 | 0d |  |
| 122 | 1.3.12.2.3 | Cargar fotográfias |  | 1h | 2016-03-17 16:00 | 2016-03-17 17:00 | 121 | 0d |  |
| 123 | 1.3.12.2.4 | Activar o desactivar secciones del informe |  | 1h | 2016-03-17 17:00 | 2016-03-17 18:00 | 122 | 0d |  |
| 124 | 1.3.12.2.5 | Permitir exportación a PDF con formato estándar Tagler |  | 1h | 2016-03-17 18:00 | 2016-03-17 19:00 | 123 | 0d |  |
| 125 | 1.3.13 | **Pruebas y Validaciones** |  | 5.56d | 2016-03-18 09:00 | 2016-03-28 11:00 |  | 0d |  |
| 126 | 1.3.13.1 | Pruebas Usuario Clave en Ambiente de Pruebas xDMS |  | 23h | 2016-03-18 09:00 | 2016-03-22 18:00 | 124 | 0d |  |
| 127 | 1.3.13.2 | Rectificaciones situaciones indicadas por Usuario clave |  | 23h | 2016-03-22 18:00 | 2016-03-25 17:00 | 126 | 0d |  |
| 128 | 1.3.13.3 | Validación Usuario Clave |  | 4h | 2016-03-25 17:00 | 2016-03-28 11:00 | 127 | 0d |  |
| 129 | 1.4 | **Documentación** |  | 0.89d | 2016-03-28 11:00 | 2016-03-29 11:00 |  | 0d |  |
| 130 | 1.4.1 | Manual de Usuario |  | 4h | 2016-03-28 11:00 | 2016-03-28 17:00 | 128 | 0d |  |
| 131 | 1.4.2 | Documento de Software |  | 4h | 2016-03-28 17:00 | 2016-03-29 11:00 | 130 | 5.11d |  |
| 132 | 1.5 | Carga de fórmulas historicas |  | 45h | 2016-03-28 11:00 | 2016-04-04 18:00 | 128, 130SS | 0d |  |
| 133 | 1.6 | Paso a Producción Desarrollo Web | milestone | 1h | 2016-04-04 18:00 | 2016-04-04 19:00 | 132 | 0d |  |
| 134 | 1.7 | Reuniones de Avances |  | 8h | 2016-04-05 09:00 | 2016-04-05 19:00 | 133 | 0d |  |
| 135 | 1.8 | **Cierre de Proyecto** |  | 0.33d | 2016-04-05 09:00 | 2016-04-05 12:00 |  | 0.56d |  |
| 136 | 1.8.1 | **Capacitaciones** |  | 0.22d | 2016-04-05 09:00 | 2016-04-05 11:00 |  | 0.56d |  |
| 137 | 1.8.1.1 | Capacitación Funcional |  | 1h | 2016-04-05 09:00 | 2016-04-05 10:00 | 133 | 0.56d | 0d |
| 138 | 1.8.1.2 | Capacitación Técnica |  | 1h | 2016-04-05 10:00 | 2016-04-05 11:00 | 137 | 0.56d | 0d |

| ID | WBS | Task | Duration | Start | Finish | Predecessors | Total slack | Free slack |
| --- | --- | --- | --- | --- | --- | --- | --- | --- |
| 139 | 1.8.2 | **Reunión de Cierre de Proyecto** | 0.11d | 2016-04-05 11:00 | 2016-04-05 12:00 |  | 0.56d |  |
| 140 | 1.8.2.1 | Firma de Documento de Cierre | 1h | 2016-04-05 11:00 | 2016-04-05 12:00 | 138 | 0.56d | 0d |
| 141 | 1.8.2.2 | Entrega de Documentación del Proyecto | 1h | 2016-04-05 11:00 | 2016-04-05 12:00 | 140FF | 0.56d |  |
